How a schedule from MS Project changed from version to version. A marks actual dates.

## Version 1 (saved 2022-04-26)

Note of the change: 1er jour à la BNPP - suite

| ID | WBS | Task | Duration | Start | Finish | Predecessors | Complete | Total float | Constraint |
| --- | --- | --- | --- | --- | --- | --- | --- | --- | --- |
| 1 | 1 | **Projet Aquedi SIAAP** | 161.86d? | 2021-09-03 A | 2022-04-18 |  | 4% | 0d |  |
| 2 | 1.1 | **Version 1.9.0.2** | 34d? | 2021-12-13 A | 2022-01-27 |  | 19% | 56.86d |  |
| 3 |  | SEC12 - Purge des données et des variables fumées présentes sur l’environnement à déployer | 0.57d? | 2022-01-05 | 2022-01-05 |  |  | 73.29d | start no earlier than 2022-01-05 |
| 4 |  | SEC13 - Plage horaire spécifique aux variables fumées - Frontend | 1d? | 2021-12-22 | 2021-12-22 |  |  | 82.86d | start no earlier than 2021-12-22 |
| 5 |  | SEC14 - Affichage unique de la ligne des moyennes titrée Valeur journalière | 2d? | 2021-12-20 | 2021-12-21 |  |  | 83.86d | start no earlier than 2021-12-20 |
| 6 |  | SEC16 - Gestion de la largeur des colonnes | 0.57d? | 2021-12-17 | 2021-12-17 |  |  | 86.29d | start no earlier than 2021-12-17 |
| 7 |  | SEC17 - Export des données éditéées - Frontend | 0.43d? | 2021-12-14 | 2021-12-14 |  |  | 89.43d | start no earlier than 2021-12-14 |
| 8 |  | SEC17 - Export des données éditéées - Backend = ticket 1940 | 2d? | 2021-12-15 A | 2021-12-22 A |  | 100% |  | start no earlier than 2021-12-15 |
| 9 |  | SEC18 - Conversion des valeurs de type durée lors de l'export de donnée - Backend | 2d? | 2021-12-27 | 2021-12-28 |  |  | 78.86d | start no earlier than 2021-12-27 |
| 10 |  | SEC18 - Conversion des valeurs de type durée lors de l'export de donnée - Frontend | 0.43d? | 2021-12-17 | 2021-12-17 |  |  | 86.43d | start no earlier than 2021-12-17 |
| 11 |  | SEC19 - Visualisation de l’historisation des données fumées | 1d? | 2021-12-13 | 2021-12-13 |  |  | 89.86d | start no earlier than 2021-12-13 |
| 12 |  | SEC20 - Correction de la fonctionnalité Valorisation générale des données | 0.57d? | 2021-12-14 | 2021-12-14 |  |  | 89.29d | start no earlier than 2021-12-14 |
| 13 | 1.1.11 | **Support** | 32d? | 2021-12-15 A | 2022-01-27 |  | 30% | 56.86d |  |
| 14 |  | Ticket 2080 - Edition des données : les exports Excel et PDF des valeurs Heure sont faux | 2.57d? | 2022-01-21 | 2022-01-27 |  |  | 56.86d | start no earlier than 2022-01-21 |
| 15 |  | Ticket 2067 - Edition des données : export Excel valeurs texte incomplète | 1.43d? | 2021-12-30 | 2021-12-31 |  |  | 76.43d | start no earlier than 2021-12-30 |
| 16 |  | Ticket 2079 - Liste des évènements : export Excel vide | 1d? | 2022-01-07 | 2022-01-07 |  |  | 70.86d | start no earlier than 2022-01-07 |
| 17 |  | Ticket 1970 - Export des données depuis édition/validation | 3d? | 2021-12-23 A | 2021-12-29 A |  | 100% |  | start no earlier than 2021-12-23 |
| 18 |  | Ticket 1940 - Export des données | 2d? | 2021-12-15 | 2021-12-16 |  |  | 86.86d | start no earlier than 2021-12-15 |
| 19 | 1.1.12 | **Relivraison du module des données fumées** | 12d? | 2021-12-20 | 2022-01-04 |  |  | 73.86d |  |
| 20 |  | SEC13 - Plage horaire spécifique aux variables fumées - Backend | 3d? | 2021-12-21 | 2022-01-04 |  |  | 73.86d | start no earlier than 2021-12-21 |
| 21 |  | SEC15 - Gestion spécifique des heure d’ouverture | 1.57d? | 2021-12-22 | 2021-12-24 |  |  | 81.29d | start no earlier than 2021-12-22 |
| 22 |  | SEC11 - Correction du script d'injection des données fumées | 1d? | 2021-12-20 | 2021-12-20 |  |  | 84.86d | start no earlier than 2021-12-20 |
| 23 | 1.2 | **Version 1.9.0.3** | 26d? | 2021-12-16 A | 2022-01-20 |  | 24% | 61.86d |  |
| 24 |  | Déploiement / intégration 1.9.0.3 | 1d? | 2022-01-20 | 2022-01-20 |  |  | 61.86d | start no earlier than 2022-01-20 |
| 25 |  | Recette interne 1.9.0.3 | 1d? | 2022-01-18 | 2022-01-18 |  |  | 63.86d | start no earlier than 2022-01-18 |
| 26 | 1.2.3 | **Support** | 3.57d? | 2022-01-14 | 2022-01-19 |  |  | 62.86d |  |
| 27 |  | Ticket 2189 - Correctifs données fumées post 1.9.0.2 Bug A : lignes "Valeurs journalières" vides | 1d? | 2022-01-19 | 2022-01-19 |  |  | 62.86d | start no earlier than 2022-01-19 |
| 28 |  | Ticket 2044 - Frontend - Formulaires Lot A BaSta : absents, incomplet et sans affichage des données | 1d? | 2022-01-17 | 2022-01-17 |  |  | 64.86d | start no earlier than 2022-01-17 |
| 29 |  | Ticket 2172 - Correctifs données fumées post 1.9.0.2 | 1.57d? | 2022-01-14 | 2022-01-17 |  |  | 64.86d | start no earlier than 2022-01-14 |
| 30 | 1.2.4 | **Dette technique** | 25d? | 2021-12-16 A | 2022-01-19 |  | 43% | 62.86d |  |
| 31 |  | Ticket interne 2172 - Correctifs données fumées post 1.9.0.2 Bug B - Exports excel avec variables de type durée KO | 1d? | 2022-01-19 | 2022-01-19 |  |  | 62.86d | start no earlier than 2022-01-19 |
| 32 |  | Bug interne - Problème des export automatiques pour le format XML | 1d? | 2021-12-16 A | 2021-12-16 A |  | 100% |  | start no earlier than 2021-12-16 |
| 33 |  | Bug interne - Visualisation des configs d'import selon les droits du site | 1d? | 2021-12-29 | 2021-12-29 |  |  | 77.86d | start no earlier than 2021-12-29 |
| 34 |  | Dette technique - Export des données éditées d'une liste de variable sandre | 1d? | 2021-12-29 | 2021-12-29 |  |  | 77.86d | start no earlier than 2021-12-29 |
| 35 |  | Bug interne - Ajout d'une colonne "Site" sur l'écran des Unités de Mesure | 1d? | 2021-12-22 A | 2021-12-22 A |  | 100% |  | start no earlier than 2021-12-22 |
| 36 |  | Bug interne - Ecran des graphiques > Le WS pour lire les variables d'un dossier ne fonctionne pas - Backend | 1d? | 2021-12-22 | 2021-12-22 |  |  | 82.86d | start no earlier than 2021-12-22 |
| 37 |  | Bug interne – Import des variables fumées – l’attribut isFumée n’est pas pris en compte | 1d? | 2021-12-17 A | 2021-12-17 A |  | 100% |  | start no earlier than 2021-12-17 |
| 38 | 1.3 | **Congés ponctuels** | 122d? | 2021-10-11 | 2022-03-29 |  |  | 13.86d |  |
| 39 |  | Congés ponctuels de Benoit | 7.5d? | 2021-12-02 | 2022-03-22 |  |  | 19.43d | start no earlier than 2021-12-02 |
| 40 |  | Congés ponctuels de Florin | 5.86d? | 2021-12-14 | 2022-03-29 |  |  | 13.86d | start no earlier than 2021-12-14 |
| 41 |  | Vaccin Lamine | 0.43d? | 2022-01-05 | 2022-01-05 |  |  | 73.43d | start no earlier than 2022-01-05 |
| 42 |  | Congé ponctuels de Lamine | 1.86d? | 2021-10-11 | 2022-03-02 |  |  | 32.86d | start no earlier than 2021-10-11 |
| 43 | 1.4 | **Version 1.9.1.1** | 36d? | 2022-02-03 | 2022-03-24 |  |  | 16.86d |  |
| 44 | 1.4.1 | **Déploiement** | 2.43d? | 2022-03-14 | 2022-03-16 |  |  | 23.43d |  |
| 45 |  | Création packages version 1.9.1.1 + 1.9.0.4.2 | 2.43d? | 2022-03-14 | 2022-03-16 |  |  | 23.43d | start no earlier than 2022-03-14 |
| 46 | 1.4.2 | **Support** | 36d? | 2022-02-03 | 2022-03-24 |  |  | 16.86d |  |
| 47 |  | Ticket 2468 - Export des données fumées mensuelles au format hh:mm KO | 1d? | 2022-02-18 | 2022-02-18 |  |  | 40.86d | start no earlier than 2022-02-18 |
| 48 |  | Ticket 2615 - Import Supervision SAV - Plus d'import depuis le 19/03 | 0.57d? | 2022-03-21 | 2022-03-21 |  |  | 20.29d | start no earlier than 2022-03-21 |
| 49 |  | Ticket 2487 - INTERNE - Imports CSV MAV SEM KO | 1d? | 2022-02-04 | 2022-02-04 |  |  | 50.86d | start no earlier than 2022-02-04 |
| 50 |  | Ticket 2586 - Sylvain - Import LIMS SEM et MAV KO | 1.86d? | 2022-03-21 | 2022-03-24 |  |  | 10.86d | start no earlier than 2022-03-21 |
| 51 |  | Ticket 2621 - INTERNE - Minimiser les logs de l'ordonnanceur en cas de blocage de l'application | 0.43d? | 2022-03-22 | 2022-03-22 |  |  | 19.43d | start no earlier than 2022-03-22 |
| 52 |  | Ticket 2612 - Dossiers de variables et formulaires ne s'affichant pas | 0.57d? | 2022-03-22 | 2022-03-22 |  |  | 19.29d | start no earlier than 2022-03-22 |
| 53 |  | Ticket 2367 - Import Supervision SAV - Fox BioSav zones J et M : données non importées | 1.43d? | 2022-02-25 | 2022-02-28 |  |  | 33.43d | start no earlier than 2022-02-25 |
| 54 |  | Ticket 2444 - Mails Aquedi envoyés par erreur vers users MAV/SEM | 1d? | 2022-02-22 | 2022-02-22 |  |  | 38.86d | start no earlier than 2022-02-22 |
| 55 |  | Ticket 2366 - Import Supervision SAV - Fox BioSav minute : données non importées | 1.57d? | 2022-02-03 | 2022-02-24 |  |  | 36.86d | start no earlier than 2022-02-03 |
| 56 |  | Ticket 2191 - Import Supervision SAV : valeurs différentes entre BaSta et Aquedi | 1.43d? | 2022-02-15 | 2022-02-16 |  |  | 43.43d | start no earlier than 2022-02-15 |
| 57 |  | Ticket 2517 - FrontEnd - Déplacements de dossier de variables KO en production | 1.43d? | 2022-03-01 | 2022-03-02 |  |  | 33.43d | start no earlier than 2022-03-01 |
| 58 |  | Ticket 2517 - BackEnd - Déplacements de dossier de variables KO en production | 2d? | 2022-03-03 | 2022-03-04 | 63 |  | 1.43d |  |
| 59 |  | Ticket 2498 - Bilan Lot 0A "Indicateurs fonctionnement digestion" :impossible de généré le bilan de septembre 2021 | 1d? | 2022-03-02 | 2022-03-03 |  |  | 31.43d | start no earlier than 2022-03-02 |
| 60 |  | Ticket 2402 - Formulaire Lot 0A "Suivi du milieu naturel" : cellules sans données | 1d? | 2022-03-01 | 2022-03-02 | 203 |  | 33.43d | start no earlier than 2022-03-01 |
| 61 |  | Ticket 2547 - Import LIMS ponctuel | 0.57d? | 2022-03-08 | 2022-03-08 |  |  | 27.86d | start no earlier than 2022-03-08 |
| 62 |  | Ticket 2471 - Import Saisie BaSta : erreur d'import | 1d? | 2022-03-03 | 2022-03-04 | 59 |  | 31.43d | start no earlier than 2022-03-03 |
| 63 |  | Ticket 2506 - INTERNE - Exports automatiques envoyé par mail - Case à cocher "Me l'assigner" toujours cochée | 1.57d? | 2022-03-01 | 2022-03-02 | 256 |  | 1.43d | start no earlier than 2022-02-28 |
| 64 |  | Ticket 1881 - Export automatique groupe de variables | 2d? | 2022-03-02 | 2022-03-03 |  |  | 31.86d | start no earlier than 2022-03-02 |
| 65 | 1.5 | **Autres projets** | 106.57d? | 2021-11-01 | 2022-03-29 |  |  | 14.29d |  |
| 66 |  | Projet KarbonPath - Benoit | 5d? | 2022-02-16 | 2022-03-29 |  |  | 14.29d | start no earlier than 2022-02-16 |
| 67 |  | Projet TEGG - Benoit | 4.43d? | 2021-11-25 | 2022-02-08 |  |  | 48.86d | start no earlier than 2021-11-25 |
| 68 |  | Projet PQF | 5d? | 2022-03-14 | 2022-03-18 |  |  | 20.86d | start no earlier than 2022-03-14 |
| 69 |  | Projet Collins | 1.43d? | 2022-01-24 | 2022-01-25 |  |  | 59.43d | start no earlier than 2022-01-24 |
| 70 |  | Projet REGIEBOX | 2d? | 2021-11-01 | 2022-02-24 |  |  | 36.86d | finish no earlier than 2022-02-24 |

| ID | WBS | Task | Duration | Start | Finish | Predecessors | Complete | Total float | Constraint |
| --- | --- | --- | --- | --- | --- | --- | --- | --- | --- |
| 71 |  | Projet TEGG - Lamine | 2.57d? | 2021-11-25 | 2021-11-29 |  |  | 100.29d | start no earlier than 2021-11-25 |
| 72 |  | Projet PQF | 1.14d? | 2021-11-19 | 2021-11-26 |  |  | 101.29d | start no earlier than 2021-11-19 |
| 73 |  | Projet TEGG - Florin | 9d | 2021-11-24 | 2021-12-08 |  |  | 93.29d | start no earlier than 2021-11-24 |
| 74 | 1.6 | **Version 1.9.1.2** | 2d? | 2022-03-31 | 2022-04-01 |  |  | 10.86d |  |
| 75 |  | Ticket 2228 - Format de valeur | 1d? | 2022-03-31 | 2022-03-31 |  |  | 11.86d | start no earlier than 2022-03-31 |
| 76 |  | Ticket 2653 - Impossible d'enregistrer un nombre maximum de décimales à 0 | 1d? | 2022-04-01 | 2022-04-01 |  |  | 10.86d | start no earlier than 2022-04-01 |
| 77 | 1.7 | **Version 1.9.3** | 35.86d? | 2022-02-28 | 2022-04-18 |  |  | 0d |  |
| 78 |  | SAV17 - Backend - Implémentation de la zone de texte enrichi au sein des formulaires personnalisables | 10d? | 2022-03-08 | 2022-04-11 | 58 |  | 0.43d | start no earlier than 2022-03-08 |
| 79 |  | SAV18 - Frontend - Implémentation de la Zone de texte enrichi sur les bilans générés | 6.57d? | 2022-03-30 | 2022-04-07 |  |  | 7.29d | start no earlier than 2022-03-30 |
| 80 |  | SAV17 - Frontend - Implémentation de la zone de texte enrichi sur l'application web | 8.57d? | 2022-02-28 | 2022-03-29 |  |  | 14.29d | start no earlier than 2022-02-28 |
| 81 |  | Ticket 2451 - lenteur importante sur l'outil au moment de créer des dossiers de variables personnel de 30 variables | 2d? | 2022-03-23 | 2022-04-06 |  |  | 8.29d | start no earlier than 2022-03-23 |
| 82 |  | SAV18 - Implémentation de la zone de texte enrichi sur les bilans générés | 5d? | 2022-04-11 | 2022-04-18 | 78 |  | 0.43d |  |
| 83 |  | Création d'un script d'extraction des données de production relative à une usine | 1.43d? | 2022-03-18 | 2022-04-18 |  |  | 0d | start no earlier than 2022-03-18 |
| 84 | 1.8 | **Encadrements** | 138d? | 2021-09-27 | 2022-04-06 |  |  | 7.86d |  |
| 85 |  | Encadrement de Bilal | 1d? | 2021-12-30 | 2021-12-30 |  |  | 76.86d | start no earlier than 2021-12-30 |
| 86 |  | Encadrement Bilal et Samir par Lamine | 13.14d? | 2021-09-30 | 2022-04-06 |  |  | 7.86d | start no earlier than 2021-09-30 |
| 87 |  | Révision des fiches de tests | 1.57d? | 2021-11-29 | 2021-11-30 |  |  | 98.86d | start no earlier than 2021-11-29 |
| 88 |  | Encadrement Bilal et Samir par Florin | 0.57d? | 2021-09-27 | 2021-09-27 |  |  | 126.43d | start no earlier than 2021-09-27 |
| 89 |  | MAJ Documentation (manuel, doc de formations...) | 0.57d? | 2021-10-05 | 2021-10-05 |  |  | 139.29d | start no earlier than 2021-10-05 |
| 90 | 1.9 | **Version 1.8.5** | 12d? | 2021-09-03 A | 2021-09-20 |  | 3% | -1d |  |
| 91 |  | Gestion des unités de mesure spécifique pour chaque usine - Frontend | 3d | 2021-09-08 | 2021-09-10 | 96 |  | 5d |  |
| 92 |  | Gestion des unités de mesure spécifique pour chaque usine - Tests par Randa | 1.5d? | 2021-09-09 | 2021-09-10 |  |  | 5.5d | start no earlier than 2021-09-09 |
| 93 |  | DE 1629 - Gestion des unités de mesure spécifique pour chaque usine - Backend et recette interne | 5.57d? | 2021-09-08 | 2021-09-16 |  |  | 1.43d | start no earlier than 2021-09-08 |
| 94 |  | Ticket 1755 - Impossibilité de générer es rapports dans l'environnement de préprod | 1d? | 2021-09-13 | 2021-09-13 |  |  | 4d | start no earlier than 2021-09-13 |
| 95 |  | Ticket 1603 - Problème d'envois de mails liés aux exports automatiques | 2d | 2021-09-17 | 2021-09-20 |  |  | -1d | start no earlier than 2021-09-17 |
| 96 |  | Refonte formulaires - Frontend | 3d | 2021-09-03 | 2021-09-07 |  |  | 5d |  |
| 97 |  | Atelier technico fonctionnel SAV | 1d? | 2021-09-16 | 2021-09-16 |  |  | 1d | start no earlier than 2021-09-16 |
| 98 |  | Erreur interne lors de la sélection d'un groupe de formulaires | 4h | 2021-09-03 A | 2021-09-03 A |  | 100% |  |  |
| 99 |  | Recherche via métadonnées - Tests | 4h | 2021-09-14 | 2021-09-14 |  |  | 3.43d | start no earlier than 2021-09-14 |
| 100 | 1.10 | **Version 1.8.6** | 42d? | 2021-09-20 A | 2021-11-16 | 90 | 19% | 108.86d |  |
| 101 |  | Tests - DT01 - Refonte formulaire (lié à SAV19) | 3d | 2021-09-22 | 2021-09-24 |  |  | 145.86d | start no earlier than 2021-09-22 |
| 102 | 1.10.2 | **Formations** | 13.57d? | 2021-09-20 A | 2021-10-07 |  | 37% | 137.29d |  |
| 103 |  | Formation Modélisation des bilans | 13.5h | 2021-09-27 A | 2021-10-07 |  | 26% | 137.43d | start no earlier than 2021-09-27 |
| 104 |  | Présentation de l’architecture technique du projet et du MCD à Samir et Bilal | 7.5h | 2021-09-21 A | 2021-09-21 A |  | 100% |  |  |
| 105 |  | Préparation Formation Utilisateur standard | 3.21d | 2021-09-20 A | 2021-09-23 A |  | 100% |  | finish no earlier than 2021-09-21 |
| 106 |  | Préparation Formation Administrateur | 6.57d? | 2021-09-29 | 2021-10-07 |  |  | 61.43d | start no earlier than 2021-09-29 |
| 107 | 1.10.3 | **Gestion des environnents** | 41d? | 2021-09-21 A | 2021-11-16 |  | 27% | 108.86d |  |
| 108 |  | Préparation de l’environnement 1.8.6 (injection des Ums) | 1.14d? | 2021-10-11 | 2021-10-12 |  |  | 133.86d | start no earlier than 2021-10-11 |
| 109 |  | Rédaction documentation 1.8.6 | 0.43d? | 2021-10-15 | 2021-10-15 |  |  | 131.43d | start no earlier than 2021-10-15 |
| 110 |  | Déploiement version 1.9.0 en préprod + déploiement version 1.8.6 en production + Déploiement version 1.9.f sur environnement de test | 1d? | 2021-11-16 | 2021-11-16 |  |  | 108.86d | start no earlier than 2021-11-16 |
| 111 |  | Intégration des données SEC sur l’environnement Dev pour relivraison des formulaires à SEC | 1.43d? | 2021-10-07 A | 2021-10-08 A |  | 100% |  | start no earlier than 2021-10-07 |
| 112 |  | Préparation de la mise en production de la 1.8.6 | 0.43d? | 2021-10-11 | 2021-10-11 |  |  | 135.43d | start no earlier than 2021-10-11 |
| 113 |  | Déploiements (Aquedi 1.8.5, environnement de test pour les formations, Aquedi 1.8.6) | 4h | 2021-09-21 | 2021-09-21 |  |  | 149.29d | start no earlier than 2021-09-21 |
| 114 |  | Déploiement environnement de test 1.9.0 | 2h | 2021-09-22 | 2021-09-22 |  |  | 148.57d | start no earlier than 2021-09-22 |
| 115 | 1.10.4 | **Support** | 11d? | 2021-09-22 A | 2021-10-06 |  | 70% | 137.86d |  |
| 116 |  | Ticket 1814 - Absence de remontée de code variable en cas d’erreur de conversion | 1d? | 2021-10-06 A | 2021-10-06 A |  | 100% |  | start no earlier than 2021-10-06 |
| 117 |  | Ticket 1775 Appel Webservice Agilims test | 3h | 2021-09-22 | 2021-09-22 |  |  | 148.43d | start no earlier than 2021-09-22 |
| 118 | 1.10.5 | **Bugs internes** | 31.43d? | 2021-09-23 A | 2021-11-05 |  | 8% | 116.43d |  |
| 119 |  | Bug interne - Pas de calcul automatique après insertion des valeurs dans les variables formule - Frontend | 0.43d? | 2021-10-26 | 2021-10-26 |  |  | 124.43d | start no earlier than 2021-10-26 |
| 120 |  | Bug interne – Liste déroulante des exports automatiques | 0.57d? | 2021-11-04 | 2021-11-04 |  |  | 117.29d | start no earlier than 2021-11-04 |
| 121 |  | Bug interne - Frontend - Intégrer une colonne Site dans le suivi des imports | 1d? | 2021-10-14 | 2021-10-14 |  |  | 131.86d | start no earlier than 2021-10-14 |
| 122 |  | Bug interne - Intégrer une colonne Site dans le suivi des imports | 3d? | 2021-10-13 | 2021-10-15 |  |  | 130.86d | start no earlier than 2021-10-13 |
| 123 |  | Bug interne - Pas de calcul automatique après insertion des valeurs dans les variables formule - Backend | 1d? | 2021-10-18 | 2021-10-18 |  |  | 129.86d | start no earlier than 2021-10-18 |
| 124 |  | Bug interne - Absence de remontée des alarmes liés à la génération des rapports | 0.57d? | 2021-10-20 | 2021-10-20 |  |  | 128.29d | start no earlier than 2021-10-20 |
| 125 |  | Bug interne -bug de génération des rapports au PDF en cas de plusieurs onglets | 0.57d? | 2021-10-22 | 2021-10-22 |  |  | 126.29d | start no earlier than 2021-10-22 |
| 126 |  | Bug interne – Navigation entre les groupes de formulaires | 0.43d? | 2021-11-05 | 2021-11-05 |  |  | 116.43d | start no earlier than 2021-11-05 |
| 127 |  | Bug interne - Visibilité des imports LIMS limitée par site | 7d? | 2021-10-20 | 2021-11-03 |  |  | 117.86d | start no earlier than 2021-10-20 |
| 128 |  | Bug interne LIMS - L’import LIMS ne s’effectue pas quand on paramètre plus d’un demandeur | 1.5d? | 2021-10-01 | 2021-10-06 |  |  | 138.36d | start no earlier than 2021-10-01 |
| 129 |  | Bug interne - Référentiel => Toutes les Variables : Erreur interne si le filtre type variable est activé | 0.43d? | 2021-10-07 | 2021-10-07 |  |  | 137.43d | start no earlier than 2021-10-07 |
| 130 |  | Bug interne - Impossibilité d'ajouter plus d'un code événement à un bilan sandre - BackEnd | 1d? | 2021-10-07 | 2021-10-07 |  |  | 136.86d | start no earlier than 2021-10-07 |
| 131 |  | Bug interne - Impossibilité d'ajouter plus d'un code événement à un bilan sandre - FrontEnd | 0.86d? | 2021-10-08 | 2021-10-08 |  |  | 136d | start no earlier than 2021-10-08 |
| 132 |  | Bug interne LIMS - Les erreurs Lims ne sont pas remontées | 1.43d | 2021-10-01 A | 2021-10-04 |  |  | 140.43d | finish no earlier than 2021-10-04 |
| 133 |  | Bug interne - Ajouts manuels : erreur interne lorsqu'on sélectionne un point de mesure | 1d | 2021-10-07 A | 2021-10-07 A |  | 100% |  | start no earlier than 2021-10-07 |
| 134 |  | Bug interne - Impossibilité d'ajouter une variable à un dossier | 32.34h | 2021-09-23 A | 2021-09-29 |  | 5% | 143.24d | start no earlier than 2021-09-23 |
| 135 |  | Bug interne - Configuration d'alarme sur variable, données excessives KO | 1d? | 2021-10-04 A | 2021-10-06 A |  | 100% |  | start no earlier than 2021-10-04 |
| 136 | 1.11 | **Version 1.9.0 - 1.9.f** | 69d? | 2021-09-03 A | 2021-12-08 |  | 7% | 92.86d |  |
| 137 | 1.11.1 | **Gestion des environnents** | 0.43d? | 2021-11-15 | 2021-11-15 |  |  | 110.43d |  |
| 138 |  | Préparation déploiement de la 1.9.0 | 0.43d? | 2021-11-15 | 2021-11-15 |  |  | 110.43d | start no earlier than 2021-11-15 |
| 139 | 1.11.2 | **Gestion des données SICK sur l’usine SEC** | 44.57d? | 2021-09-22 | 2021-11-23 |  |  | 104.29d |  |
| 140 |  | SEC01 - Données 10 min - BackEnd | 1.57d? | 2021-09-24 | 2021-11-18 |  |  | 106.86d | start no earlier than 2021-09-24 |

| ID | WBS | Task | Duration | Start | Finish | Predecessors | Complete | Total float | Constraint |
| --- | --- | --- | --- | --- | --- | --- | --- | --- | --- |
| 141 |  | SEC01 - Données 10 min au sein des formulaires - FrontEnd | 0.5d | 2021-10-05 | 2021-10-05 |  |  | 139.36d | start no earlier than 2021-10-05 |
| 142 |  | SEC01 - Données 10 min sans les formulaires - FrontEnd | 2.5d? | 2021-09-27 | 2021-09-30 |  |  | 142.36d | start no earlier than 2021-09-27 |
| 143 |  | SEC03 - Gestion des variables de type "durée" - FrontEnd | 1d? | 2021-11-05 | 2021-11-05 |  |  | 115.86d | start no earlier than 2021-11-05 |
| 144 |  | SEC02 - Données 30 min au sein des formulaires - FrontEnd | 0.5d | 2021-10-05 | 2021-10-05 |  |  | 139.36d | start no earlier than 2021-10-05 |
| 145 |  | SEC02 - Données 30 min - BackEnd | 2d | 2021-10-04 | 2021-10-07 |  |  | 137.43d | start no earlier than 2021-10-04 |
| 146 |  | SEC02 - Données 30 min sans les formulaires - FrontEnd | 2.5d? | 2021-09-30 | 2021-10-06 |  |  | 137.86d | start no earlier than 2021-09-30 |
| 147 |  | SEC05 - Implémentation de l'import mensuel - Reprise Lamine | 4d? | 2021-11-08 | 2021-11-16 | 148 |  | 108.86d | start no earlier than 2021-11-08 |
| 148 |  | SEC04 -Implémentation de l'import quotidien - Reprise Lamine | 2.57d? | 2021-11-03 | 2021-11-08 |  |  | 108.86d | start no earlier than 2021-11-03 |
| 149 |  | SEC03 - Création des variables fumées + évolution du paramétrage - FrontEnd | 3.5h | 2021-10-05 | 2021-10-05 | 151 |  | 138.86d | start no earlier than 2021-09-28 |
| 150 |  | SEC09 - Nouvel écran d'édition/validation : gestion des statuts supplémentaires | 2d? | 2021-11-10 | 2021-11-11 |  |  | 111.86d | start no earlier than 2021-11-10 |
| 151 |  | SEC03 - Création des variables fumées + évolution du paramétrage - BackEnd | 5.5d | 2021-09-28 | 2021-10-05 |  |  | 124.86d | start no earlier than 2021-09-28 |
| 152 |  | SEC04 - Implémentation de l'import quotidien - Backend | 9d | 2021-10-05 | 2021-10-18 | 151 |  | 124.86d |  |
| 153 |  | SEC08 - Visualisation des données fumées Nouvel écran d'édition/validation - Backend | 5d? | 2021-10-28 | 2021-11-08 |  |  | 114.86d | start no earlier than 2021-10-28 |
| 154 |  | SEC10 - Nouvel écran d'édition/validation : associations mesures et valeurs moyennes - Backend | 2d? | 2021-10-25 | 2021-11-09 |  |  | 113.86d | start no earlier than 2021-10-25 |
| 155 |  | SEC10 - Nouvel écran d'édition/validation : associations mesures et valeurs moyennes - FrontEnd | 5d | 2021-10-11 | 2021-11-04 |  |  | 117.43d | start no earlier than 2021-10-11 |
| 156 |  | SEC05 - Implémentation de l'import mensuel - Backend | 5d | 2021-10-19 | 2021-10-25 | 152 |  | 124.86d |  |
| 157 |  | SEC06 - Création d'un nouveau menu + écran de dossiers de variables fumées - Frontend | 3.43d? | 2021-09-22 | 2021-10-05 |  |  | 139.43d | start no earlier than 2021-09-22 |
| 158 |  | SEC06 - Création d'un nouveau menu + écran de dossiers de variables fumées - Backend | 3.29d? | 2021-09-27 | 2021-10-22 | 88 |  | 126.43d | start no earlier than 2021-09-27 |
| 159 |  | SEC07 - Création des dossiers de variables fumées | 1d? | 2021-10-27 | 2021-10-27 |  |  | 122.86d | start no earlier than 2021-10-27 |
| 160 |  | SEC03 - Aide Florin à Samir | 1.43d? | 2021-10-08 | 2021-10-11 |  |  | 134.86d | start no earlier than 2021-10-08 |
| 161 |  | SAV36 - Reprise historique - Bilan Sandre | 3d? | 2021-11-18 | 2021-11-23 |  |  | 104.29d | start no earlier than 2021-11-18 |
| 162 | 1.11.3 | **Support** | 34.57d? | 2021-09-03 | 2021-10-21 |  |  | 127.29d |  |
| 163 |  | Ticket 1953 – Recherche par nom des imports SFTP et LIMS KO - Frontend | 0.57d? | 2021-09-03 | 2021-09-03 |  |  | 161.29d |  |
| 164 |  | Ticket 1778 - A l'ouverture d'une fiche variable en édition, arrivée sur une page intermédiaire | 1d? | 2021-10-13 | 2021-10-13 |  |  | 132.86d | start no earlier than 2021-10-13 |
| 165 |  | Bug interne - Ajustements applicatifs nécessaires à la gestion des bilans SAV | 1.57d? | 2021-10-20 | 2021-10-21 |  |  | 127.29d | start no earlier than 2021-10-20 |
| 166 | 1.11.4 | **Phase d'intégration SAV** | 69d? | 2021-09-03 A | 2021-12-08 |  | 15% | 92.86d |  |
| 167 |  | Atelier SAV n°3 | 3h | 2021-09-23 A | 2021-09-23 A |  | 100% |  | start no earlier than 2021-09-23 |
| 168 |  | Atelier SAV n°5 | 1d? | 2021-11-09 | 2021-11-09 |  |  | 113.86d | start no earlier than 2021-11-09 |
| 169 |  | Atelier SAV n°4 | 3.5h | 2021-09-27 A | 2021-09-27 A |  | 100% |  | start no earlier than 2021-09-27 |
| 170 |  | SAV04 - Variables de type quart d'heure - FrontEnd | 1d? | 2021-10-07 | 2021-10-08 |  |  | 136.29d | start no earlier than 2021-10-07 |
| 171 |  | SAV05-Variables de type minute - Backend | 3.43d? | 2021-09-22 | 2021-10-28 |  |  | 121.86d | start no earlier than 2021-09-22 |
| 172 |  | SAV05-Variables de type minute - Frontend | 4.57d | 2021-09-03 | 2021-10-21 |  |  | 126.86d |  |
| 173 |  | SAV19 - Formulaires personnalisables / Possibilité de figer les tailles des colonnes ou des lignes | 5d | 2021-09-24 | 2021-09-30 |  |  | 141.86d | start no earlier than 2021-09-24 |
| 174 |  | SAV10 - Ajout de fonctions de calcul - UX/UI | 3d | 2021-09-23 | 2021-09-27 |  |  | 144.86d | start no earlier than 2021-09-23 |
| 175 |  | SAV11 - Ajout de fonctions de calcul / Intégration des calculs dateheure - Backend | 4.71d? | 2021-10-04 | 2021-10-25 |  |  | 124.86d | start no earlier than 2021-10-04 |
| 176 |  | SAV29 - Import de la cartographie des variables dans Aquedi | 0.57d | 2021-09-29 | 2021-09-29 |  |  | 143.29d | start no earlier than 2021-09-29 |
| 177 |  | SAV27 - Duplication des variables multi-période | 1d? | 2021-09-28 | 2021-09-29 |  |  | 143.43d | start no earlier than 2021-09-28 |
| 178 |  | Nouvelle gestion des périodes d’agrégation | 5d? | 2021-10-29 | 2021-11-19 |  |  | 105.86d | start no earlier than 2021-10-29 |
| 179 |  | SAV36 - Reprise historique - Bilan Sandre | 1d? | 2021-09-03 | 2021-09-03 |  |  | 160.86d |  |
| 180 |  | SAV25 - Import des saisies manuelles et des données laboratoire | 13.86d | 2021-09-30 | 2021-12-08 |  |  | 93.36d | start no earlier than 2021-09-30 |
| 181 |  | SAV31 -Sylvain - Implémentation des variables calculées suite à l’ajout des fonctions de Basta | 3.57d? | 2021-11-24 | 2021-12-08 |  |  | 93.29d | start no earlier than 2021-11-24 |
| 182 |  | SAV31 - Lamine - Implémentation des variables calculées suite à l’ajout des fonctions de Basta | 4.14d? | 2021-10-29 | 2021-11-19 |  |  | 105.86d | start no earlier than 2021-10-29 |
| 183 |  | SAV10 - Ajout de fonctions de calcul - Frontend | 8d | 2021-10-05 A | 2021-12-08 A |  | 100% |  | finish no earlier than 2021-10-07 |
| 184 | 1.12 | **Version 1.9.1** | 97.43d? | 2021-10-15 | 2022-03-01 |  |  | 34.43d |  |
| 185 |  | Déploiement / intégration 1.9.1 | 1.43d? | 2022-02-07 | 2022-02-08 |  |  | 46.86d | start no earlier than 2022-02-07 |
| 186 | 1.12.2 | **Phase d'intégration SAV** | 68d? | 2021-11-22 | 2022-02-23 |  |  | 37.86d |  |
| 187 |  | SAV12 - Frontend - Précisions des calculs / Gestion des niveaux d’arrondis au sein de l'application web | 1d? | 2021-12-29 | 2021-12-29 |  |  | 77.86d | start no earlier than 2021-12-29 |
| 188 |  | SAV12 - Backend - Précisions des calculs / Gestion des niveaux d’arrondis au sein de l'application web | 12.14d? | 2021-12-07 | 2022-01-25 |  |  | 58.86d | start no earlier than 2021-12-07 |
| 189 |  | SAV13 - Précisions des calculs / Gestion des niveaux d’arrondis au sein des bilans | 9.57d? | 2021-12-31 | 2022-01-27 |  |  | 56.86d | start no earlier than 2021-12-31 |
| 190 |  | SAV13 - Tests - Précisions des calculs / Gestion des niveaux d’arrondis au sein des bilans | 1d? | 2022-01-28 | 2022-01-28 |  |  | 55.86d | start no earlier than 2022-01-28 |
| 191 |  | SAV12 - Tests - Précisions des calculs / Gestion des niveaux d’arrondis au sein de l'application web | 1d? | 2022-01-27 | 2022-01-27 |  |  | 56.86d | start no earlier than 2022-01-27 |
| 192 |  | SAV15 - Tests - Correction des mesures erronées - Lamine | 1d? | 2022-02-14 | 2022-02-14 |  |  | 44.86d | start no earlier than 2022-02-14 |
| 193 |  | SAV15 - Tests - Correction des mesures erronées - Benoit | 1d? | 2022-02-03 | 2022-02-03 |  |  | 51.86d | start no earlier than 2022-02-03 |
| 194 |  | SAV15 - Frontend - Correction des mesures erronées | 3d? | 2022-01-26 | 2022-02-01 |  |  | 53.86d | start no earlier than 2022-01-26 |
| 195 |  | SAV15 - Backend - Correction des mesures erronées | 4.57d? | 2022-01-28 | 2022-02-03 |  |  | 52.29d | start no earlier than 2022-01-28 |
| 196 |  | SAV20 - Gestion des données invalides | 6.43d? | 2022-01-05 | 2022-02-21 |  |  | 39.86d | start no earlier than 2022-01-05 |
| 197 |  | SAV23 - Modélisation des bilans Sandre [Chgt Sélection] - Florin | 7.43d? | 2022-01-10 | 2022-02-02 |  |  | 53.43d | start no earlier than 2022-01-10 |
| 198 |  | SAV23 - Modélisation des bilans Sandre [Chgt Sélection] - Sylvain | 4d? | 2022-01-06 | 2022-01-11 |  |  | 68.86d | start no earlier than 2022-01-06 |
| 199 |  | SAV36 - 1.9.1 - Reprise de dumps et migration de données de Basta à Aquedi | 3d? | 2022-01-31 | 2022-02-02 |  |  | 52.86d | start no earlier than 2022-01-31 |
| 200 |  | SAV07 - Impact des nouveaux types de variables sur les imports / Optimisation du code | 11.71d? | 2022-01-18 | 2022-02-23 |  |  | 37.86d | start no earlier than 2022-01-18 |
| 201 |  | SAV30 - Validation paramétrage et tests des imports / Imports binaires et SFTP | 1.43d? | 2021-11-22 | 2021-12-31 |  |  | 75.86d | start no earlier than 2021-11-22 |
| 202 | 1.12.3 | **Support** | 97.43d? | 2021-10-15 | 2022-03-01 |  |  | 34.43d |  |
| 203 |  | Ticket 2372 - Reprise de données : Variable heure calculée fausse | 1d? | 2022-02-28 | 2022-03-01 | 53 |  | 33.43d | start no earlier than 2022-02-28 |
| 204 |  | Ticket 1921 – Données inférieures à la Lq non prises en compte lors d'un import LIMS | 5.43d? | 2021-12-02 | 2022-02-04 |  |  | 50.86d | start no earlier than 2021-12-02 |
| 205 |  | Ticket 2221 - Edition/validation - Copier coller des valeurs textes KO | 2d? | 2022-01-21 | 2022-01-24 |  |  | 59.86d | start no earlier than 2022-01-21 |
| 206 |  | Ticket 2086 – Implémentation d’une formule de type moyenne sans zéros | 2d? | 2022-02-02 | 2022-02-03 |  |  | 23.43d | start no earlier than 2022-02-02 |
| 207 |  | Ticket 2082 - Edition des données : export ne prenant pas en compte les dates sans valeur | 1d? | 2022-01-12 | 2022-01-12 |  |  | 67.86d | start no earlier than 2022-01-12 |
| 208 |  | Ticket 2073 - Edition des données : export Excel et PDF des valeurs texte avec balises | 0.43d? | 2022-01-14 | 2022-01-14 |  |  | 66.43d | start no earlier than 2022-01-14 |
| 209 |  | Ticket 2097 - Edition des données : exports Excel et PDF des valeurs quart d'heure de 00:00 à 23:45 au lieu de 07:15 à 07:00 | 1d? | 2022-01-03 | 2022-01-03 |  |  | 74.86d | start no earlier than 2022-01-03 |
| 210 |  | Ticket 2028 - Optimisation du module des formulaires 1.8.6 | 4d? | 2022-01-18 | 2022-01-21 |  |  | 60.86d | start no earlier than 2022-01-18 |

| ID | WBS | Task | Duration | Start | Finish | Predecessors | Complete | Total float | Constraint |
| --- | --- | --- | --- | --- | --- | --- | --- | --- | --- |
| 211 |  | Ticket 2088 - Reprise de données BaSta : valeurs absentes pour les variables J4BMNBM02_Q et J4BMNBM01_Q | 1d? | 2021-12-30 | 2021-12-30 |  |  | 76.86d | start no earlier than 2021-12-30 |
| 212 |  | Ticket 2078 - Problème de génération de Bilan | 1d? | 2021-12-28 | 2021-12-28 |  |  | 78.86d | start no earlier than 2021-12-28 |
| 213 |  | Ticket 2072 - Edition des données : valeur texte non visible complètement | 1d? | 2022-01-03 | 2022-01-03 |  |  | 74.86d | start no earlier than 2022-01-03 |
| 214 |  | Ticket 2044 - Backend - Formulaires Lot A BaSta : absents, incomplet et sans affichage des données | 1d? | 2021-12-29 | 2021-12-29 |  |  | 77.86d | start no earlier than 2021-12-29 |
| 215 |  | Ticket 2098 - Edition des données : export PDF des valeurs quart d'heure et minute sans précision de l'heure | 1d? | 2022-01-04 | 2022-01-04 |  |  | 73.86d | start no earlier than 2022-01-04 |
| 216 |  | Ticket 1962 - Impossibilité de supprimer une valeur alors que le bouton l'autorise | 1d? | 2022-01-25 | 2022-01-25 |  |  | 58.86d | start no earlier than 2022-01-25 |
| 217 |  | Ticket 2068 - Reprise de données BaSta : valeurs des variables Date incorrectes | 1d? | 2022-02-04 | 2022-02-04 |  |  | 50.86d | start no earlier than 2022-02-04 |
| 218 |  | Ticket 2086 - Frontend - Nouvelle formule de calcul : moyenne sans zéros | 2.57d? | 2022-02-04 | 2022-02-09 |  |  | 47.86d | start no earlier than 2022-02-04 |
| 219 |  | Ticket 1958 - Validation des données via les formulaires - Réduction de la plage de date par défaut | 1d? | 2021-11-09 | 2021-11-09 |  |  | 113.86d | start no earlier than 2021-11-09 |
| 220 |  | Ticket 2043 - Reprise de données BaSta : valeur ayant un statut Invalide alors qu'elle a été modifiée dans BaSta | 1d? | 2022-01-12 | 2022-01-12 |  |  | 67.86d | start no earlier than 2022-01-12 |
| 221 |  | Bug interne – Problème de performances+bugs à l’édition des données fumées | 2d? | 2021-11-22 | 2021-11-23 |  |  | 103.86d | start no earlier than 2021-11-22 |
| 222 |  | Ticket interne 2192 - Correctifs données fumées post 1.9.0.2 Bug C- Génération de bilans avec variables de type durée KO | 1d? | 2022-01-19 | 2022-01-19 |  |  | 62.86d | start no earlier than 2022-01-19 |
| 223 |  | Ticket 2333 - Connection impossible au service LIMS | 2.43d? | 2022-01-25 | 2022-02-03 |  |  | 52.43d | start no earlier than 2022-01-25 |
| 224 |  | Ticket 2166 - Erreur lors de l'import d'un fichier binaire | 1.57d? | 2022-01-14 | 2022-01-17 |  |  | 64.86d | start no earlier than 2022-01-14 |
| 225 |  | Ticket 2093 - Bilan Lot 0A BaSta : valeurs Heures en partie fausses dans l'onglet Global_Cuves pour le bilan 1025-Mb_BM_Suivi global membranes | 1d? | 2022-01-13 | 2022-01-13 |  |  | 66.86d | start no earlier than 2022-01-13 |
| 226 |  | Incident 1605 – La reproduction de la valeur precedente ne fonctionne pas | 4d? | 2021-10-15 | 2021-12-01 |  |  | 97.86d | start no earlier than 2021-10-15 |
| 227 | 1.13 | **Version 1.9.2** | 155d? | 2021-09-03 | 2022-04-07 |  |  | 6.86d |  |
| 228 | 1.13.1 | **Evolutions SAV** | 153.43d? | 2021-09-03 | 2022-04-06 |  |  | 8.43d |  |
| 229 |  | SAV14 - Frontend - Variables calculées liée à une procédure stockée | 1d? | 2021-09-03 | 2021-09-03 |  |  | 160.86d |  |
| 230 |  | SAV08 - Impact des nouveaux types de variables sur les imports / Optimisation de la base de donnée | 13.14d? | 2021-12-13 | 2022-02-25 |  |  | 35.86d | start no earlier than 2021-12-13 |
| 231 |  | SAV21 - Frontend - Menu arborescent | 16.14d? | 2022-03-02 | 2022-04-04 |  |  | 7.43d | start no earlier than 2022-03-02 |
| 232 |  | SAV14 - Backend - Variables calculées liée à une procédure stockée | 6d? | 2022-03-04 | 2022-04-06 |  |  | 8.43d | start no earlier than 2022-03-04 |
| 233 |  | SAV34 - Florin - Matrice des droits | 5d? | 2022-03-30 | 2022-04-05 | 234 |  | 8.86d | start no earlier than 2022-03-30 |
| 234 |  | SAV34 - Sylvain - Matrice des droits | 1d? | 2022-03-25 | 2022-03-28 | 50 |  | 10.43d | start no earlier than 2022-03-25 |
| 235 |  | SAV21 - Backend - Menu arborescent | 19d? | 2022-02-07 | 2022-03-24 |  |  | 13.86d | start no earlier than 2022-02-07 |
| 236 | 1.13.2 | **Intégration SAV - Reprise du dump** | 3.57d? | 2022-03-31 | 2022-04-05 |  |  | 9.29d |  |
| 237 |  | Reprise du paramétrage des variables de Basta | 0.43d? | 2022-03-31 | 2022-03-31 |  |  | 9.29d | start no earlier than 2022-03-31 |
| 238 |  | Extraction des données de variable et de leur statut de la base de données de BaSta | 0.57d? | 2022-03-31 | 2022-03-31 | 237 |  | 9.29d |  |
| 239 |  | Vérification des injections des données | 1d? | 2022-04-01 | 2022-04-01 | 238 |  | 9.29d | start no earlier than 2022-04-01 |
| 240 |  | Vérification du bon déroulement des imports SFTP standard, binaires, de saisies manuelles | 1.57d? | 2022-04-04 | 2022-04-05 | 239 |  | 9.29d |  |
| 241 | 1.13.3 | **Support** | 74d? | 2021-12-27 | 2022-04-07 |  |  | 6.86d |  |
| 242 |  | Ticket 2230 - Lamine - Impossible de dupliquer une variables LIMS | 1d? | 2022-02-17 | 2022-02-17 |  |  | 41.86d | start no earlier than 2022-02-17 |
| 243 |  | Ticket 2230 - Benoit - Impossible de dupliquer une variables LIMS | 0.43d? | 2022-03-30 | 2022-03-30 |  |  | 13.43d | start no earlier than 2022-03-30 |
| 244 |  | Ticket 2230 - Bilal - Impossible de dupliquer une variables LIMS | 2.57d? | 2022-03-24 | 2022-03-30 |  |  | 12.86d | start no earlier than 2022-03-24 |
| 245 |  | Ticket 2165 - Import Supervision SAV : valeurs de la variable J4GDRDGTAG1 divisées par 100 dans Aquedi par rapport à BaSta pour le 10/12/2021 | 0.43d? | 2022-03-29 | 2022-03-29 |  |  | 14.43d | start no earlier than 2022-03-29 |
| 246 |  | Ticket 2656 - Passage à l'heure d'été : fichiers supervisions en erreur | 1d? | 2022-03-30 | 2022-03-30 |  |  | 12.86d | start no earlier than 2022-03-30 |
| 247 |  | Ticket 2164 - Supervision SAV : pour la variable J4OPCHG2, des valeurs sont affichées dans Aquedi pour le 10/12/2021 alors qu'il n'y en a pas dans BaSta | 0.57d? | 2022-03-29 | 2022-03-29 |  |  | 14.29d | start no earlier than 2022-03-29 |
| 248 |  | Ticket 2081 - Reprise de données BaSta : variables de Type "Liste déroulante" non déclarées dans Aquedi en tant que variable ayant une "Liste de valeurs" | 2.43d? | 2022-01-05 | 2022-02-14 |  |  | 44.86d | start no earlier than 2022-01-05 |
| 249 |  | Ticket 2227 - Problème avec le statut de la donnée _ préprod 1.9.0.3 | 1d? | 2022-02-22 | 2022-02-22 |  |  | 38.86d | start no earlier than 2022-02-22 |
| 250 |  | Ticket 2374 - Backend - INTERNE Hiérarchisation des droits utilisateurs | 2d? | 2022-02-16 | 2022-02-17 |  |  | 40.86d | start no earlier than 2022-02-16 |
| 251 |  | Ticket 2219 - Liste des évènements : la purge ne fonctionne pas | 1d? | 2022-02-18 | 2022-02-18 | 250 |  | 40.86d | finish no earlier than 2022-02-18 |
| 252 |  | Ticket 2100 - Alarmes | 1.57d? | 2022-02-23 | 2022-02-24 |  |  | 37.29d | start no earlier than 2022-02-23 |
| 253 |  | Ticket 2508 - Frontend - INTERNE - LQ pas affiché dans l'historique lors d'une création de variable | 1.43d? | 2022-03-03 | 2022-03-04 |  |  | 31.43d | start no earlier than 2022-03-03 |
| 254 |  | Ticket 2658 - INTERNE - Bug sur sur une formule de modélisation pour les bilans mensuels | 2d? | 2022-03-25 | 2022-03-28 |  |  | 14.86d | start no earlier than 2022-03-25 |
| 255 |  | Ticket 2589 - Florin - Bilans MAV impossibles à générer | 4d? | 2022-03-17 | 2022-03-24 |  |  | 16.86d | start no earlier than 2022-03-17 |
| 256 |  | Ticket 2508 - Backend - INTERNE - LQ pas affiché dans l'historique lors d'une création de variable | 1.43d? | 2022-02-28 | 2022-03-01 |  |  | 1.43d | start no earlier than 2022-02-28 |
| 257 |  | Ticket 2589 - Bilal - Bilans MAV impossibles à générer | 1d? | 2022-03-18 | 2022-03-18 |  |  | 20.86d | start no earlier than 2022-03-18 |
| 258 |  | Ticket 2586 - Bilal - Import LIMS SEM et MAV KO | 1d? | 2022-03-17 | 2022-03-17 |  |  | 21.86d | start no earlier than 2022-03-17 |
| 259 |  | Ticket 1890 - Bilal - Accès à tous les droits de tous les sites | 3.57d? | 2022-02-25 | 2022-03-16 |  |  | 22.86d | start no earlier than 2022-02-25 |
| 260 |  | Ticket 2063 – Backend - Edition des données : toutes les valeurs ne sont pas visibles / Dette technique – Refonte de l’écran Edition/Validation | 6.43d? | 2022-01-13 | 2022-04-07 |  |  | 6.86d | start no earlier than 2022-01-13 |
| 261 |  | Ticket 1890 - Lamine - Accès à tous les droits de tous les sites | 3.14d? | 2022-03-24 | 2022-03-29 | 235 |  | 13.86d | start no earlier than 2022-03-22 |
| 262 |  | Ticket 1823 - Large visualisation des données sur l'écran édition/validation | 2.43d? | 2022-04-05 | 2022-04-07 | 231 |  | 7.43d | start no earlier than 2021-09-03 |
| 263 |  | Ticket 2374 - FrontEnd - INTERNE Hiérarchisation des droits utilisateurs | 1d? | 2022-03-14 | 2022-03-14 |  |  | 24.86d | start no earlier than 2022-03-14 |
| 264 |  | Ticket 2063 – Frontend - Edition des données : toutes les valeurs ne sont pas visibles / Dette technique – Refonte de l’écran Edition/Validation | 21d? | 2021-12-27 | 2022-02-28 |  |  | 34.86d | start no earlier than 2021-12-27 |
| 265 | 1.13.4 | **Dette technique** | 43d? | 2022-02-04 | 2022-04-05 |  |  | 8.86d |  |
| 266 |  | Ticket 2590 - INTERNE - Décorrélation entre les droits et la classification des documents | 10d? | 2022-03-09 | 2022-04-05 |  |  | 8.86d | start no earlier than 2022-03-09 |
| 267 |  | Ticket interne 2193 - Frontend - Export automatique vers un espace de stockage partagé + import | 2.43d? | 2022-02-17 | 2022-03-11 |  |  | 26.43d | start no earlier than 2022-02-17 |
| 268 |  | Ticket interne 2193 - Backend - Export automatique vers un espace de stockage partagé + Import | 6.43d? | 2022-02-04 | 2022-03-16 | 206 |  | 23.43d | start no earlier than 2022-01-21 |
| 269 | 1.13.5 | **Autres** | 36.14d? | 2022-02-08 | 2022-03-30 |  |  | 13.29d |  |
| 270 |  | Aide présentation Ben sur les droits - Benoit | 0.57d? | 2022-03-30 | 2022-03-30 |  |  | 13.29d | start no earlier than 2022-03-30 |
| 271 |  | Présentation Stratégie Edouard Paletou | 0.43d? | 2022-03-28 | 2022-03-28 |  |  | 15.43d | start no earlier than 2022-03-28 |
| 272 |  | Congé parental - Lamine | 3d? | 2022-02-21 | 2022-02-23 |  |  | 37.86d | start no earlier than 2022-02-21 |
| 273 |  | Ticket 2640 - Problèmes lenteurs serveurs de test | 1.57d? | 2022-03-23 | 2022-03-28 |  |  | 15.29d | start no earlier than 2022-03-23 |
| 274 |  | Livraison MCD Aquedi | 1.43d? | 2022-03-08 | 2022-03-09 | 61 |  | 27.86d | start no earlier than 2022-03-08 |
| 275 |  | Management Equipe | 2.57d? | 2022-02-08 | 2022-02-10 | 185 |  | 46.86d | start no earlier than 2022-02-08 |
| 276 | 1.14 | **Version 1.9.0.1** | 57d? | 2021-09-30 A | 2021-12-17 |  | 2% | 85.86d |  |
| 277 | 1.14.1 | **Déploiement SAV - Début marche en double** | 10d? | 2021-11-22 | 2021-12-03 |  |  | 95.86d |  |
| 278 |  | Vérification des simulations | 1d? | 2021-11-29 | 2021-11-29 |  |  | 99.86d | start no earlier than 2021-11-29 |
| 279 |  | Simulation de l'Injection des données autre que les valeurs dans la base d’AQUEDI sur un environnement de tests de Studia | 1d? | 2021-11-25 | 2021-11-25 |  |  | 101.86d | start no earlier than 2021-11-25 |
| 280 |  | Conversion des formules de calcul au format AQUEDI | 0.75d? | 2021-11-23 | 2021-11-23 |  |  | 104.11d | start no earlier than 2021-11-23 |

| ID | WBS | Task | Duration | Start | Finish | Complete | Total float | Constraint |
| --- | --- | --- | --- | --- | --- | --- | --- | --- |
| 281 |  | Analyse, traitement du fichier d'extraction pour créer les bilans SANDRE et les points de mesure | 1d? | 2021-11-24 | 2021-11-24 |  | 102.86d | start no earlier than 2021-11-24 |
| 282 |  | Injections des référentiels et des données de variables | 4d? | 2021-11-30 | 2021-12-03 |  | 95.86d | start no earlier than 2021-11-30 |
| 283 |  | Reprise des attributs communs aux deux outils (description, période, type, alias, unité de mesure, métadonnées,…) en préproduction | 0.57d? | 2021-11-22 | 2021-11-22 |  | 105.29d | start no earlier than 2021-11-22 |
| 284 |  | Simulation des injections des données de variable dans la base AQUEDI sur un environnement de test de Studia | 1d? | 2021-11-26 | 2021-11-26 |  | 100.86d | start no earlier than 2021-11-26 |
| 285 |  | Duplication des variables avec plusieurs périodes | 0.57d? | 2021-11-23 | 2021-11-23 |  | 104.29d | start no earlier than 2021-11-23 |
| 286 | 1.14.2 | **Autres** | 6d? | 2021-12-02 | 2021-12-09 |  | 91.86d |  |
| 287 |  | Chiffrage du lot 2 des évolutions | 1d? | 2021-12-09 | 2021-12-09 |  | 91.86d | start no earlier than 2021-12-09 |
| 288 |  | Préparation environnement de formation pour SAV | 1.5d? | 2021-12-02 | 2021-12-03 |  | 95.86d | start no earlier than 2021-12-02 |
| 289 | 1.14.3 | **Support** | 18d? | 2021-11-16 | 2021-12-09 |  | 91.86d |  |
| 290 |  | Bug interne - Module des imports automatiques KO | 1d? | 2021-12-09 | 2021-12-09 |  | 91.86d | finish no earlier than 2021-12-09 |
| 291 |  | Bug interne - Décalage dans les colonnes et leur valeurs lors de l'export des définitions de variable d'un groupe | 0.43d? | 2021-12-02 | 2021-12-02 |  | 97.43d | start no earlier than 2021-12-02 |
| 292 |  | Bug interne - WS de récupération de l'état d'avancement des validation | 1d? | 2021-12-03 | 2021-12-03 |  | 95.86d | start no earlier than 2021-12-03 |
| 293 |  | Ticket 1883 – Problème de visualisation des droits | 1.43d? | 2021-11-16 | 2021-11-26 |  | 101.43d | start no earlier than 2021-11-16 |
| 294 |  | Bug interne - Module alarmes KO suite à la livraison des données fumées | 1d? | 2021-11-29 | 2021-11-30 |  | 99.29d | start no earlier than 2021-11-29 |
| 295 | 1.14.4 | **Dette technique** | 8d? | 2021-11-15 A | 2021-11-24 | 14% | 102.86d |  |
| 296 |  | Bug interne - Impossibilité de créer un import LIMS | 0.57d? | 2021-11-24 | 2021-11-24 |  | 103.29d | start no earlier than 2021-11-24 |
| 297 |  | Bug interne - Edition et validation / largeur des colonnes doit correspondre à la taille du code de variable | 1d? | 2021-11-15 | 2021-11-15 |  | 109.86d | start no earlier than 2021-11-15 |
| 298 |  | Bug interne – Doublons dans le tableau des graphes - Frontend | 1d? | 2021-11-15 | 2021-11-15 |  | 109.86d | start no earlier than 2021-11-15 |
| 299 |  | Bug interne – Alarmes sur les données fumées KO | 1d? | 2021-11-24 A | 2021-11-24 A | 100% |  | start no earlier than 2021-11-24 |
| 300 |  | CRUD des variables - Optimisation du stepper | 3.43d? | 2021-11-19 | 2021-11-24 |  | 102.86d | start no earlier than 2021-11-19 |
| 301 | 1.14.5 | **Evolutions SAV** | 57d? | 2021-09-30 | 2021-12-17 |  | 85.86d |  |
| 302 |  | SAV37 – Gestion d’un nouveau format de date pour les imports CSV | 1d? | 2021-12-10 | 2021-12-10 |  | 90.86d | start no earlier than 2021-12-10 |
| 303 |  | SAV38 – Implémentation de l’unité d’import | 6d? | 2021-12-08 | 2021-12-16 |  | 86.86d | start no earlier than 2021-12-08 |
| 304 |  | SAV36 - Reprise de dumps et migration de données de Basta à Aquedi | 11.14d? | 2021-10-01 | 2021-11-18 |  | 106.86d | start no earlier than 2021-10-01 |
| 305 |  | Etude de la volumétrie globale des variables | 1d? | 2021-12-17 | 2021-12-17 |  | 85.86d | start no earlier than 2021-12-17 |
| 306 |  | SAV10 - Ajout de fonctions de calcul - Backend | 7.14d? | 2021-09-30 | 2021-10-19 |  | 128.86d | start no earlier than 2021-09-30 |

## Version 2 (saved 2023-05-07)

Note of the change: up

Last finish stays 2022-04-18.

Changed:

| ID | Task | Start | Finish | Duration | Total float | Other |
| --- | --- | --- | --- | --- | --- | --- |
| 1 | **Projet Aquedi SIAAP** | 2021-09-03 A → 2021-09-03 09:00 A | 2022-04-18 → 2022-04-18 17:00 | 161.86d? → 141.62d? |  |  |
| 2 | **Version 1.9.0.2** | 2021-12-13 A → 2021-12-13 09:30 A | 2022-01-27 → 2022-01-27 18:00 | 34d? → 29.75d? | 56.86d → 49.75d |  |
| 3 | SEC12 - Purge des données et des variables fumées présentes sur l’environnement à déployer | 2022-01-05 → 2022-01-05 09:30 | 2022-01-05 → 2022-01-05 15:00 | 0.57d? → 0.5d? | 73.29d → 64.12d | constraint start no earlier than 2022-01-05 → start no earlier than 2022-01-05 06:00 |
| 4 | SEC13 - Plage horaire spécifique aux variables fumées - Frontend | 2021-12-22 → 2021-12-22 09:30 | 2021-12-22 → 2021-12-22 18:00 | 1d? → 0.88d? | 82.86d → 72.5d | constraint start no earlier than 2021-12-22 → start no earlier than 2021-12-22 09:00 |
| 5 | SEC14 - Affichage unique de la ligne des moyennes titrée Valeur journalière | 2021-12-20 → 2021-12-20 09:30 | 2021-12-21 → 2021-12-21 18:00 | 2d? → 1.75d? | 83.86d → 73.38d | constraint start no earlier than 2021-12-20 → start no earlier than 2021-12-20 09:00 |
| 6 | SEC16 - Gestion de la largeur des colonnes | 2021-12-17 → 2021-12-17 09:30 | 2021-12-17 → 2021-12-17 15:00 | 0.57d? → 0.5d? | 86.29d → 75.5d | constraint start no earlier than 2021-12-17 → start no earlier than 2021-12-17 09:00 |
| 7 | SEC17 - Export des données éditéées - Frontend | 2021-12-14 → 2021-12-14 09:30 | 2021-12-14 → 2021-12-14 12:30 | 0.43d? → 0.38d? | 89.43d → 78.25d | constraint start no earlier than 2021-12-14 → start no earlier than 2021-12-14 09:00 |
| 8 | SEC17 - Export des données éditéées - Backend = ticket 1940 | 2021-12-15 A → 2021-12-15 09:30 A | 2021-12-22 A → 2021-12-22 18:00 A | 2d? → 1.75d? |  | constraint start no earlier than 2021-12-15 → start no earlier than 2021-12-15 09:00 |
| 9 | SEC18 - Conversion des valeurs de type durée lors de l'export de donnée - Backend | 2021-12-27 → 2021-12-27 09:30 | 2021-12-28 → 2021-12-28 18:00 | 2d? → 1.75d? | 78.86d → 69d | constraint start no earlier than 2021-12-27 → start no earlier than 2021-12-27 09:00 |
| 10 | SEC18 - Conversion des valeurs de type durée lors de l'export de donnée - Frontend | 2021-12-17 → 2021-12-17 09:30 | 2021-12-17 → 2021-12-17 12:30 | 0.43d? → 0.38d? | 86.43d → 75.62d | constraint start no earlier than 2021-12-17 → start no earlier than 2021-12-17 09:00 |
| 11 | SEC19 - Visualisation de l’historisation des données fumées | 2021-12-13 → 2021-12-13 09:30 | 2021-12-13 → 2021-12-13 18:00 | 1d? → 0.88d? | 89.86d → 78.62d | constraint start no earlier than 2021-12-13 → start no earlier than 2021-12-13 09:00 |
| 12 | SEC20 - Correction de la fonctionnalité Valorisation générale des données | 2021-12-14 → 2021-12-14 09:30 | 2021-12-14 → 2021-12-14 15:00 | 0.57d? → 0.5d? | 89.29d → 78.12d | constraint start no earlier than 2021-12-14 → start no earlier than 2021-12-14 09:00 |
| 13 | **Support** | 2021-12-15 A → 2021-12-15 09:30 A | 2022-01-27 → 2022-01-27 18:00 | 32d? → 28d? | 56.86d → 49.75d |  |
| 14 | Ticket 2080 - Edition des données : les exports Excel et PDF des valeurs Heure sont faux | 2022-01-21 → 2022-01-21 09:30 | 2022-01-27 → 2022-01-27 18:00 | 2.57d? → 2.25d? | 56.86d → 49.75d | constraint start no earlier than 2022-01-21 → start no earlier than 2022-01-21 09:00 |
| 15 | Ticket 2067 - Edition des données : export Excel valeurs texte incomplète | 2021-12-30 → 2021-12-30 09:30 | 2021-12-31 → 2021-12-31 12:30 | 1.43d? → 1.25d? | 76.43d → 66.88d | constraint start no earlier than 2021-12-30 → start no earlier than 2021-12-30 09:00 |
| 16 | Ticket 2079 - Liste des évènements : export Excel vide | 2022-01-07 → 2022-01-07 09:30 | 2022-01-07 → 2022-01-07 18:00 | 1d? → 0.88d? | 70.86d → 62d | constraint start no earlier than 2022-01-07 → start no earlier than 2022-01-07 09:00 |
| 17 | Ticket 1970 - Export des données depuis édition/validation | 2021-12-23 A → 2021-12-23 09:30 A | 2021-12-29 A → 2021-12-29 18:00 A | 3d? → 2.62d? |  | constraint start no earlier than 2021-12-23 → start no earlier than 2021-12-23 09:00 |
| 18 | Ticket 1940 - Export des données | 2021-12-15 → 2021-12-15 09:30 | 2021-12-16 → 2021-12-16 18:00 | 2d? → 1.75d? | 86.86d → 76d | constraint start no earlier than 2021-12-15 → start no earlier than 2021-12-15 09:00 |
| 19 | **Relivraison du module des données fumées** | 2021-12-20 → 2021-12-20 09:30 | 2022-01-04 → 2022-01-04 18:00 | 12d? → 10.5d? | 73.86d → 64.62d |  |
| 20 | SEC13 - Plage horaire spécifique aux variables fumées - Backend | 2021-12-21 → 2021-12-21 09:30 | 2022-01-04 → 2022-01-04 18:00 | 3d? → 2.62d? | 73.86d → 64.62d | constraint start no earlier than 2021-12-21 → start no earlier than 2021-12-21 09:00 |
| 21 | SEC15 - Gestion spécifique des heure d’ouverture | 2021-12-22 → 2021-12-22 09:30 | 2021-12-24 → 2021-12-24 15:00 | 1.57d? → 1.38d? | 81.29d → 71.12d | constraint start no earlier than 2021-12-22 → start no earlier than 2021-12-22 09:00 |
| 22 | SEC11 - Correction du script d'injection des données fumées | 2021-12-20 → 2021-12-20 09:30 | 2021-12-20 → 2021-12-20 18:00 | 1d? → 0.88d? | 84.86d → 74.25d | constraint start no earlier than 2021-12-20 → start no earlier than 2021-12-20 09:00 |
| 23 | **Version 1.9.0.3** | 2021-12-16 A → 2021-12-16 09:30 A | 2022-01-20 → 2022-01-20 18:00 | 26d? → 22.75d? | 61.86d → 54.12d |  |
| 24 | Déploiement / intégration 1.9.0.3 | 2022-01-20 → 2022-01-20 09:30 | 2022-01-20 → 2022-01-20 18:00 | 1d? → 0.88d? | 61.86d → 54.12d | constraint start no earlier than 2022-01-20 → start no earlier than 2022-01-20 09:00 |
| 25 | Recette interne 1.9.0.3 | 2022-01-18 → 2022-01-18 09:30 | 2022-01-18 → 2022-01-18 18:00 | 1d? → 0.88d? | 63.86d → 55.88d | constraint start no earlier than 2022-01-18 → start no earlier than 2022-01-18 09:00 |
| 26 | **Support** | 2022-01-14 → 2022-01-14 14:00 | 2022-01-19 → 2022-01-19 18:00 | 3.57d? → 3.12d? | 62.86d → 55d |  |
| 27 | Ticket 2189 - Correctifs données fumées post 1.9.0.2 Bug A : lignes "Valeurs journalières" vides | 2022-01-19 → 2022-01-19 09:30 | 2022-01-19 → 2022-01-19 18:00 | 1d? → 0.88d? | 62.86d → 55d | constraint start no earlier than 2022-01-19 → start no earlier than 2022-01-19 09:00 |
| 28 | Ticket 2044 - Frontend - Formulaires Lot A BaSta : absents, incomplet et sans affichage des données | 2022-01-17 → 2022-01-17 09:30 | 2022-01-17 → 2022-01-17 18:00 | 1d? → 0.88d? | 64.86d → 56.75d | constraint start no earlier than 2022-01-17 → start no earlier than 2022-01-17 09:00 |
| 29 | Ticket 2172 - Correctifs données fumées post 1.9.0.2 | 2022-01-14 → 2022-01-14 14:00 | 2022-01-17 → 2022-01-17 18:00 | 1.57d? → 1.38d? | 64.86d → 56.75d | constraint start no earlier than 2022-01-14 → start no earlier than 2022-01-14 14:00 |
| 30 | **Dette technique** | 2021-12-16 A → 2021-12-16 09:30 A | 2022-01-19 → 2022-01-19 18:00 | 25d? → 21.88d? | 62.86d → 55d |  |
| 31 | Ticket interne 2172 - Correctifs données fumées post 1.9.0.2 Bug B - Exports excel avec variables de type durée KO | 2022-01-19 → 2022-01-19 09:30 | 2022-01-19 → 2022-01-19 18:00 | 1d? → 0.88d? | 62.86d → 55d | constraint start no earlier than 2022-01-19 → start no earlier than 2022-01-19 09:00 |
| 32 | Bug interne - Problème des export automatiques pour le format XML | 2021-12-16 A → 2021-12-16 09:30 A | 2021-12-16 A → 2021-12-16 18:00 A | 1d? → 0.88d? |  | constraint start no earlier than 2021-12-16 → start no earlier than 2021-12-16 09:00 |
| 33 | Bug interne - Visualisation des configs d'import selon les droits du site | 2021-12-29 → 2021-12-29 09:30 | 2021-12-29 → 2021-12-29 18:00 | 1d? → 0.88d? | 77.86d → 68.12d | constraint start no earlier than 2021-12-29 → start no earlier than 2021-12-29 09:00 |
| 34 | Dette technique - Export des données éditées d'une liste de variable sandre | 2021-12-29 → 2021-12-29 09:30 | 2021-12-29 → 2021-12-29 18:00 | 1d? → 0.88d? | 77.86d → 68.12d | constraint start no earlier than 2021-12-29 → start no earlier than 2021-12-29 09:00 |
| 35 | Bug interne - Ajout d'une colonne "Site" sur l'écran des Unités de Mesure | 2021-12-22 A → 2021-12-22 09:30 A | 2021-12-22 A → 2021-12-22 18:00 A | 1d? → 0.88d? |  | constraint start no earlier than 2021-12-22 → start no earlier than 2021-12-22 09:00 |
| 36 | Bug interne - Ecran des graphiques > Le WS pour lire les variables d'un dossier ne fonctionne pas - Backend | 2021-12-22 → 2021-12-22 09:30 | 2021-12-22 → 2021-12-22 18:00 | 1d? → 0.88d? | 82.86d → 72.5d | constraint start no earlier than 2021-12-22 → start no earlier than 2021-12-22 09:00 |
| 37 | Bug interne – Import des variables fumées – l’attribut isFumée n’est pas pris en compte | 2021-12-17 A → 2021-12-17 09:30 A | 2021-12-17 A → 2021-12-17 18:00 A | 1d? → 0.88d? |  | constraint start no earlier than 2021-12-17 → start no earlier than 2021-12-17 09:00 |
| 38 | **Congés ponctuels** | 2021-10-11 → 2021-10-11 09:30 | 2022-03-29 → 2022-03-29 18:00 | 122d? → 106.75d? | 13.86d → 12.12d |  |
| 39 | Congés ponctuels de Benoit | 2021-12-02 → 2021-12-02 09:30 | 2022-03-22 → 2022-03-22 12:30 | 7.5d? → 6.56d? | 19.43d → 17d | constraint start no earlier than 2021-12-02 → start no earlier than 2021-12-02 09:00 |
| 40 | Congés ponctuels de Florin | 2021-12-14 → 2021-12-14 09:30 | 2022-03-29 → 2022-03-29 18:00 | 5.86d? → 5.12d? | 13.86d → 12.12d | constraint start no earlier than 2021-12-14 → start no earlier than 2021-12-14 09:00 |
| 41 | Vaccin Lamine | 2022-01-05 → 2022-01-05 09:30 | 2022-01-05 → 2022-01-05 12:30 | 0.43d? → 0.38d? | 73.43d → 64.25d | constraint start no earlier than 2022-01-05 → start no earlier than 2022-01-05 09:00 |
| 42 | Congé ponctuels de Lamine | 2021-10-11 → 2021-10-11 09:30 | 2022-03-02 → 2022-03-02 18:00 | 1.86d? → 1.62d? | 32.86d → 28.75d | constraint start no earlier than 2021-10-11 → start no earlier than 2021-10-11 09:00 |
| 43 | **Version 1.9.1.1** | 2022-02-03 → 2022-02-03 09:30 | 2022-03-24 → 2022-03-24 18:00 | 36d? → 31.5d? | 16.86d → 14.75d |  |
| 44 | **Déploiement** | 2022-03-14 → 2022-03-14 09:30 | 2022-03-16 → 2022-03-16 12:30 | 2.43d? → 2.12d? | 23.43d → 20.5d |  |
| 45 | Création packages version 1.9.1.1 + 1.9.0.4.2 | 2022-03-14 → 2022-03-14 09:30 | 2022-03-16 → 2022-03-16 12:30 | 2.43d? → 2.12d? | 23.43d → 20.5d | constraint start no earlier than 2022-03-14 → start no earlier than 2022-03-14 09:00 |
| 46 | **Support** | 2022-02-03 → 2022-02-03 09:30 | 2022-03-24 → 2022-03-24 18:00 | 36d? → 31.5d? | 16.86d → 14.75d |  |
| 47 | Ticket 2468 - Export des données fumées mensuelles au format hh:mm KO | 2022-02-18 → 2022-02-18 09:30 | 2022-02-18 → 2022-02-18 18:00 | 1d? → 0.88d? | 40.86d → 35.75d | constraint start no earlier than 2022-02-18 → start no earlier than 2022-02-18 09:00 |
| 48 | Ticket 2615 - Import Supervision SAV - Plus d'import depuis le 19/03 | 2022-03-21 → 2022-03-21 09:30 | 2022-03-21 → 2022-03-21 15:00 | 0.57d? → 0.5d? | 20.29d → 17.75d | constraint start no earlier than 2022-03-21 → start no earlier than 2022-03-21 09:00 |
| 49 | Ticket 2487 - INTERNE - Imports CSV MAV SEM KO | 2022-02-04 → 2022-02-04 09:30 | 2022-02-04 → 2022-02-04 18:00 | 1d? → 0.88d? | 50.86d → 44.5d | constraint start no earlier than 2022-02-04 → start no earlier than 2022-02-04 09:00 |
| 50 | Ticket 2586 - Sylvain - Import LIMS SEM et MAV KO | 2022-03-21 → 2022-03-21 09:30 | 2022-03-24 → 2022-03-24 18:00 | 1.86d? → 1.62d? | 10.86d → 9.5d | constraint start no earlier than 2022-03-21 → start no earlier than 2022-03-21 09:00 |
| 51 | Ticket 2621 - INTERNE - Minimiser les logs de l'ordonnanceur en cas de blocage de l'application | 2022-03-22 → 2022-03-22 09:30 | 2022-03-22 → 2022-03-22 12:30 | 0.43d? → 0.38d? | 19.43d → 17d | constraint start no earlier than 2022-03-22 → start no earlier than 2022-03-22 09:00 |
| 52 | Ticket 2612 - Dossiers de variables et formulaires ne s'affichant pas | 2022-03-22 → 2022-03-22 09:30 | 2022-03-22 → 2022-03-22 15:00 | 0.57d? → 0.5d? | 19.29d → 16.88d | constraint start no earlier than 2022-03-22 → start no earlier than 2022-03-22 09:00 |
| 53 | Ticket 2367 - Import Supervision SAV - Fox BioSav zones J et M : données non importées | 2022-02-25 → 2022-02-25 09:30 | 2022-02-28 → 2022-02-28 12:30 | 1.43d? → 1.25d? | 33.43d → 29.25d | constraint start no earlier than 2022-02-25 → start no earlier than 2022-02-25 09:00 |
| 54 | Ticket 2444 - Mails Aquedi envoyés par erreur vers users MAV/SEM | 2022-02-22 → 2022-02-22 09:30 | 2022-02-22 → 2022-02-22 18:00 | 1d? → 0.88d? | 38.86d → 34d | constraint start no earlier than 2022-02-22 → start no earlier than 2022-02-22 09:00 |
| 55 | Ticket 2366 - Import Supervision SAV - Fox BioSav minute : données non importées | 2022-02-03 → 2022-02-03 09:30 | 2022-02-24 → 2022-02-24 18:00 | 1.57d? → 1.38d? | 36.86d → 32.25d | constraint start no earlier than 2022-02-03 → start no earlier than 2022-02-03 09:00 |
| 56 | Ticket 2191 - Import Supervision SAV : valeurs différentes entre BaSta et Aquedi | 2022-02-15 → 2022-02-15 09:30 | 2022-02-16 → 2022-02-16 12:30 | 1.43d? → 1.25d? | 43.43d → 38d | constraint start no earlier than 2022-02-15 → start no earlier than 2022-02-15 09:00 |
| 57 | Ticket 2517 - FrontEnd - Déplacements de dossier de variables KO en production | 2022-03-01 → 2022-03-01 09:30 | 2022-03-02 → 2022-03-02 12:30 | 1.43d? → 1.25d? | 33.43d → 29.25d | constraint start no earlier than 2022-03-01 → start no earlier than 2022-03-01 09:00 |
| 58 | Ticket 2517 - BackEnd - Déplacements de dossier de variables KO en production | 2022-03-03 → 2022-03-03 09:30 | 2022-03-04 → 2022-03-04 18:00 | 2d? → 1.75d? | 1.43d → 1.25d |  |
| 59 | Ticket 2498 - Bilan Lot 0A "Indicateurs fonctionnement digestion" :impossible de généré le bilan de septembre 2021 | 2022-03-02 → 2022-03-02 14:00 | 2022-03-03 → 2022-03-03 12:30 | 1d? → 0.88d? | 31.43d → 27.5d | constraint start no earlier than 2022-03-02 → start no earlier than 2022-03-02 14:00 |
| 60 | Ticket 2402 - Formulaire Lot 0A "Suivi du milieu naturel" : cellules sans données | 2022-03-01 → 2022-03-01 14:00 | 2022-03-02 → 2022-03-02 12:30 | 1d? → 0.88d? | 33.43d → 29.25d | constraint start no earlier than 2022-03-01 → start no earlier than 2022-03-01 09:00 |
| 61 | Ticket 2547 - Import LIMS ponctuel | 2022-03-08 → 2022-03-08 09:30 | 2022-03-08 → 2022-03-08 15:00 | 0.57d? → 0.5d? | 27.86d → 24.38d | constraint start no earlier than 2022-03-08 → start no earlier than 2022-03-08 09:00 |
| 62 | Ticket 2471 - Import Saisie BaSta : erreur d'import | 2022-03-03 → 2022-03-03 14:00 | 2022-03-04 → 2022-03-04 12:30 | 1d? → 0.88d? | 31.43d → 27.5d | constraint start no earlier than 2022-03-03 → start no earlier than 2022-03-03 09:00 |
| 63 | Ticket 2506 - INTERNE - Exports automatiques envoyé par mail - Case à cocher "Me l'assigner" toujours cochée | 2022-03-01 → 2022-03-01 14:00 | 2022-03-02 → 2022-03-02 18:00 | 1.57d? → 1.38d? | 1.43d → 1.25d | constraint start no earlier than 2022-02-28 → start no earlier than 2022-02-28 09:00 |
| 64 | Ticket 1881 - Export automatique groupe de variables | 2022-03-02 → 2022-03-02 09:30 | 2022-03-03 → 2022-03-03 18:00 | 2d? → 1.75d? | 31.86d → 27.88d | constraint start no earlier than 2022-03-02 → start no earlier than 2022-03-02 09:00 |
| 65 | **Autres projets** | 2021-11-01 → 2021-11-01 09:30 | 2022-03-29 → 2022-03-29 15:00 | 106.57d? → 93.25d? | 14.29d → 12.5d |  |
| 66 | Projet KarbonPath - Benoit | 2022-02-16 → 2022-02-16 09:30 | 2022-03-29 → 2022-03-29 15:00 | 5d? → 4.38d? | 14.29d → 12.5d | constraint start no earlier than 2022-02-16 → start no earlier than 2022-02-16 09:00 |
| 67 | Projet TEGG - Benoit | 2021-11-25 → 2021-11-25 09:30 | 2022-02-08 → 2022-02-08 18:00 | 4.43d? → 3.88d? | 48.86d → 42.75d | constraint start no earlier than 2021-11-25 → start no earlier than 2021-11-25 09:00 |
| 68 | Projet PQF | 2022-03-14 → 2022-03-14 09:30 | 2022-03-18 → 2022-03-18 18:00 | 5d? → 4.38d? | 20.86d → 18.25d | constraint start no earlier than 2022-03-14 → start no earlier than 2022-03-14 09:00 |
| 69 | Projet Collins | 2022-01-24 → 2022-01-24 09:30 | 2022-01-25 → 2022-01-25 12:30 | 1.43d? → 1.25d? | 59.43d → 52d | constraint start no earlier than 2022-01-24 → start no earlier than 2022-01-24 09:00 |
| 70 | Projet REGIEBOX | 2021-11-01 → 2021-11-01 09:30 | 2022-02-24 → 2022-02-24 18:00 | 2d? → 1.75d? | 36.86d → 32.25d | constraint finish no earlier than 2022-02-24 → finish no earlier than 2022-02-24 18:00 |

| ID | Task | Start | Finish | Duration | Total float | Other |
| --- | --- | --- | --- | --- | --- | --- |
| 71 | Projet TEGG - Lamine | 2021-11-25 → 2021-11-25 09:30 | 2021-11-29 → 2021-11-29 15:00 | 2.57d? → 2.25d? | 100.29d → 87.75d | constraint start no earlier than 2021-11-25 → start no earlier than 2021-11-25 09:00 |
| 72 | Projet PQF | 2021-11-19 → 2021-11-19 14:00 | 2021-11-26 → 2021-11-26 15:00 | 1.14d? → 1d? | 101.29d → 88.62d | constraint start no earlier than 2021-11-19 → start no earlier than 2021-11-19 13:00 |
| 73 | Projet TEGG - Florin | 2021-11-24 → 2021-11-24 09:30 | 2021-12-08 → 2021-12-08 15:00 | 9d → 7.88d | 93.29d → 81.62d | constraint start no earlier than 2021-11-24 → start no earlier than 2021-11-24 09:00 |
| 74 | **Version 1.9.1.2** | 2022-03-31 → 2022-03-31 09:30 | 2022-04-01 → 2022-04-01 18:00 | 2d? → 1.75d? | 10.86d → 9.5d |  |
| 75 | Ticket 2228 - Format de valeur | 2022-03-31 → 2022-03-31 09:30 | 2022-03-31 → 2022-03-31 18:00 | 1d? → 0.88d? | 11.86d → 10.38d | constraint start no earlier than 2022-03-31 → start no earlier than 2022-03-31 09:00 |
| 76 | Ticket 2653 - Impossible d'enregistrer un nombre maximum de décimales à 0 | 2022-04-01 → 2022-04-01 09:30 | 2022-04-01 → 2022-04-01 18:00 | 1d? → 0.88d? | 10.86d → 9.5d | constraint start no earlier than 2022-04-01 → start no earlier than 2022-04-01 09:00 |
| 77 | **Version 1.9.3** | 2022-02-28 → 2022-02-28 09:30 | 2022-04-18 → 2022-04-18 17:00 | 35.86d? → 31.38d? |  |  |
| 78 | SAV17 - Backend - Implémentation de la zone de texte enrichi au sein des formulaires personnalisables | 2022-03-08 → 2022-03-08 09:30 | 2022-04-11 → 2022-04-11 12:30 | 10d? → 8.75d? | 0.43d → 0.38d | constraint start no earlier than 2022-03-08 → start no earlier than 2022-03-08 09:00 |
| 79 | SAV18 - Frontend - Implémentation de la Zone de texte enrichi sur les bilans générés | 2022-03-30 → 2022-03-30 09:30 | 2022-04-07 → 2022-04-07 15:00 | 6.57d? → 5.75d? | 7.29d → 6.38d | constraint start no earlier than 2022-03-30 → start no earlier than 2022-03-30 09:00 |
| 80 | SAV17 - Frontend - Implémentation de la zone de texte enrichi sur l'application web | 2022-02-28 → 2022-02-28 09:30 | 2022-03-29 → 2022-03-29 15:00 | 8.57d? → 7.5d? | 14.29d → 12.5d | constraint start no earlier than 2022-02-28 → start no earlier than 2022-02-28 09:00 |
| 81 | Ticket 2451 - lenteur importante sur l'outil au moment de créer des dossiers de variables personnel de 30 variables | 2022-03-23 → 2022-03-23 09:30 | 2022-04-06 → 2022-04-06 15:00 | 2d? → 1.75d? | 8.29d → 7.25d | constraint start no earlier than 2022-03-23 → start no earlier than 2022-03-23 09:00 |
| 82 | SAV18 - Implémentation de la zone de texte enrichi sur les bilans générés | 2022-04-11 → 2022-04-11 14:00 | 2022-04-18 → 2022-04-18 12:30 | 5d? → 4.38d? | 0.43d → 0.38d |  |
| 83 | Création d'un script d'extraction des données de production relative à une usine | 2022-03-18 → 2022-03-18 09:30 | 2022-04-18 → 2022-04-18 17:00 | 1.43d? → 1.25d? |  | constraint start no earlier than 2022-03-18 → start no earlier than 2022-03-18 09:00 |
| 84 | **Encadrements** | 2021-09-27 → 2021-09-27 09:30 | 2022-04-06 → 2022-04-06 18:00 | 138d? → 120.75d? | 7.86d → 6.88d |  |
| 85 | Encadrement de Bilal | 2021-12-30 → 2021-12-30 09:30 | 2021-12-30 → 2021-12-30 18:00 | 1d? → 0.88d? | 76.86d → 67.25d | constraint start no earlier than 2021-12-30 → start no earlier than 2021-12-30 09:00 |
| 86 | Encadrement Bilal et Samir par Lamine | 2021-09-30 → 2021-09-30 09:30 | 2022-04-06 → 2022-04-06 18:00 | 13.14d? → 11.5d? | 7.86d → 6.88d | constraint start no earlier than 2021-09-30 → start no earlier than 2021-09-30 09:00 |
| 87 | Révision des fiches de tests | 2021-11-29 → 2021-11-29 09:30 | 2021-11-30 → 2021-11-30 18:00 | 1.57d? → 1.38d? | 98.86d → 86.5d | constraint start no earlier than 2021-11-29 → start no earlier than 2021-11-29 09:00 |
| 88 | Encadrement Bilal et Samir par Florin | 2021-09-27 → 2021-09-27 09:30 | 2021-09-27 → 2021-09-27 15:00 | 0.57d? → 0.5d? | 126.43d → 110.62d | constraint start no earlier than 2021-09-27 → start no earlier than 2021-09-27 09:00 |
| 89 | MAJ Documentation (manuel, doc de formations...) | 2021-10-05 → 2021-10-05 09:30 | 2021-10-05 → 2021-10-05 15:00 | 0.57d? → 0.5d? | 139.29d → 121.88d | constraint start no earlier than 2021-10-05 → start no earlier than 2021-10-05 09:00 |
| 90 | **Version 1.8.5** | 2021-09-03 A → 2021-09-03 09:00 A | 2021-09-20 → 2021-09-20 18:00 | 12d? → 10.5d? | -1d → -0.88d |  |
| 91 | Gestion des unités de mesure spécifique pour chaque usine - Frontend | 2021-09-08 → 2021-09-08 09:30 | 2021-09-10 → 2021-09-10 18:00 | 3d → 2.62d | 5d → 4.38d |  |
| 92 | Gestion des unités de mesure spécifique pour chaque usine - Tests par Randa | 2021-09-09 → 2021-09-09 09:30 | 2021-09-10 → 2021-09-10 14:30 | 1.5d? → 1.31d? | 5.5d → 4.81d | constraint start no earlier than 2021-09-09 → start no earlier than 2021-09-09 09:00 |
| 93 | DE 1629 - Gestion des unités de mesure spécifique pour chaque usine - Backend et recette interne | 2021-09-08 → 2021-09-08 09:30 | 2021-09-16 → 2021-09-16 15:00 | 5.57d? → 4.88d? | 1.43d → 1.25d | constraint start no earlier than 2021-09-08 → start no earlier than 2021-09-08 06:00 |
| 94 | Ticket 1755 - Impossibilité de générer es rapports dans l'environnement de préprod | 2021-09-13 → 2021-09-13 09:30 | 2021-09-13 → 2021-09-13 18:00 | 1d? → 0.88d? | 4d → 3.5d | constraint start no earlier than 2021-09-13 → start no earlier than 2021-09-13 09:00 |
| 95 | Ticket 1603 - Problème d'envois de mails liés aux exports automatiques | 2021-09-17 → 2021-09-17 09:30 | 2021-09-20 → 2021-09-20 18:00 | 2d → 1.75d | -1d → -0.88d | constraint start no earlier than 2021-09-17 → start no earlier than 2021-09-17 09:00 |
| 96 | Refonte formulaires - Frontend | 2021-09-03 → 2021-09-03 09:30 | 2021-09-07 → 2021-09-07 18:00 | 3d → 2.62d | 5d → 4.38d |  |
| 97 | Atelier technico fonctionnel SAV | 2021-09-16 → 2021-09-16 09:30 | 2021-09-16 → 2021-09-16 18:00 | 1d? → 0.88d? | 1d → 0.88d | constraint start no earlier than 2021-09-16 → start no earlier than 2021-09-16 09:00 |
| 98 | Erreur interne lors de la sélection d'un groupe de formulaires | 2021-09-03 A → 2021-09-03 09:00 A | 2021-09-03 A → 2021-09-03 14:30 A |  |  |  |
| 99 | Recherche via métadonnées - Tests | 2021-09-14 → 2021-09-14 09:30 | 2021-09-14 → 2021-09-14 15:00 |  | 3.43d → 3d | constraint start no earlier than 2021-09-14 → start no earlier than 2021-09-14 09:00 |
| 100 | **Version 1.8.6** | 2021-09-20 A → 2021-09-20 09:00 A | 2021-11-16 → 2021-11-16 18:00 | 42d? → 36.75d? | 108.86d → 95.25d |  |
| 101 | Tests - DT01 - Refonte formulaire (lié à SAV19) | 2021-09-22 → 2021-09-22 09:30 | 2021-09-24 → 2021-09-24 18:00 | 3d → 2.62d | 145.86d → 127.62d | constraint start no earlier than 2021-09-22 → start no earlier than 2021-09-22 09:27 |
| 102 | **Formations** | 2021-09-20 A → 2021-09-20 09:00 A | 2021-10-07 → 2021-10-07 15:00 | 13.57d? → 11.88d? | 137.29d → 120.12d |  |
| 103 | Formation Modélisation des bilans | 2021-09-27 A → 2021-09-27 09:00 A | 2021-10-07 → 2021-10-07 12:30 |  | 137.43d → 120.25d | constraint start no earlier than 2021-09-27 → start no earlier than 2021-09-27 09:00 |
| 104 | Présentation de l’architecture technique du projet et du MCD à Samir et Bilal | 2021-09-21 A → 2021-09-21 09:00 A | 2021-09-21 A → 2021-09-21 18:00 A |  |  |  |
| 105 | Préparation Formation Utilisateur standard | 2021-09-20 A → 2021-09-20 09:00 A | 2021-09-23 A → 2021-09-23 18:00 A | 3.21d → 2.81d |  | constraint finish no earlier than 2021-09-21 → finish no earlier than 2021-09-21 18:00 |
| 106 | Préparation Formation Administrateur | 2021-09-29 → 2021-09-29 09:30 | 2021-10-07 → 2021-10-07 15:00 | 6.57d? → 5.75d? | 61.43d → 53.75d | constraint start no earlier than 2021-09-29 → start no earlier than 2021-09-29 09:00 |
| 107 | **Gestion des environnents** | 2021-09-21 A → 2021-09-21 09:30 A | 2021-11-16 → 2021-11-16 18:00 | 41d? → 35.88d? | 108.86d → 95.25d |  |
| 108 | Préparation de l’environnement 1.8.6 (injection des Ums) | 2021-10-11 → 2021-10-11 09:30 | 2021-10-12 → 2021-10-12 18:00 | 1.14d? → 1d? | 133.86d → 117.12d | constraint start no earlier than 2021-10-11 → start no earlier than 2021-10-11 09:00 |
| 109 | Rédaction documentation 1.8.6 | 2021-10-15 → 2021-10-15 09:30 | 2021-10-15 → 2021-10-15 12:30 | 0.43d? → 0.38d? | 131.43d → 115d | constraint start no earlier than 2021-10-15 → start no earlier than 2021-10-15 09:00 |
| 110 | Déploiement version 1.9.0 en préprod + déploiement version 1.8.6 en production + Déploiement version 1.9.f sur environnement de test | 2021-11-16 → 2021-11-16 09:30 | 2021-11-16 → 2021-11-16 18:00 | 1d? → 0.88d? | 108.86d → 95.25d | constraint start no earlier than 2021-11-16 → start no earlier than 2021-11-16 09:00 |
| 111 | Intégration des données SEC sur l’environnement Dev pour relivraison des formulaires à SEC | 2021-10-07 A → 2021-10-07 09:30 A | 2021-10-08 A → 2021-10-08 18:00 A | 1.43d? → 1.25d? |  | constraint start no earlier than 2021-10-07 → start no earlier than 2021-10-07 09:00 |
| 112 | Préparation de la mise en production de la 1.8.6 | 2021-10-11 → 2021-10-11 09:30 | 2021-10-11 → 2021-10-11 12:30 | 0.43d? → 0.38d? | 135.43d → 118.5d | constraint start no earlier than 2021-10-11 → start no earlier than 2021-10-11 09:00 |
| 113 | Déploiements (Aquedi 1.8.5, environnement de test pour les formations, Aquedi 1.8.6) | 2021-09-21 → 2021-09-21 09:30 | 2021-09-21 → 2021-09-21 15:00 |  | 149.29d → 130.62d | constraint start no earlier than 2021-09-21 → start no earlier than 2021-09-21 09:00 |
| 114 | Déploiement environnement de test 1.9.0 | 2021-09-22 → 2021-09-22 09:30 | 2021-09-22 → 2021-09-22 11:30 |  | 148.57d → 130d | constraint start no earlier than 2021-09-22 → start no earlier than 2021-09-22 09:00 |
| 115 | **Support** | 2021-09-22 A → 2021-09-22 09:30 A | 2021-10-06 → 2021-10-06 18:00 | 11d? → 9.62d? | 137.86d → 120.62d |  |
| 116 | Ticket 1814 - Absence de remontée de code variable en cas d’erreur de conversion | 2021-10-06 A → 2021-10-06 09:30 A | 2021-10-06 A → 2021-10-06 18:00 A | 1d? → 0.88d? |  | constraint start no earlier than 2021-10-06 → start no earlier than 2021-10-06 09:00 |
| 117 | Ticket 1775 Appel Webservice Agilims test | 2021-09-22 → 2021-09-22 09:30 | 2021-09-22 → 2021-09-22 12:30 |  | 148.43d → 129.88d | constraint start no earlier than 2021-09-22 → start no earlier than 2021-09-22 09:00 |
| 118 | **Bugs internes** | 2021-09-23 A → 2021-09-23 09:00 A | 2021-11-05 → 2021-11-05 12:30 | 31.43d? → 27.5d? | 116.43d → 101.88d |  |
| 119 | Bug interne - Pas de calcul automatique après insertion des valeurs dans les variables formule - Frontend | 2021-10-26 → 2021-10-26 09:30 | 2021-10-26 → 2021-10-26 12:30 | 0.43d? → 0.38d? | 124.43d → 108.88d | constraint start no earlier than 2021-10-26 → start no earlier than 2021-10-26 02:00 |
| 120 | Bug interne – Liste déroulante des exports automatiques | 2021-11-04 → 2021-11-04 09:30 | 2021-11-04 → 2021-11-04 15:00 | 0.57d? → 0.5d? | 117.29d → 102.62d | constraint start no earlier than 2021-11-04 → start no earlier than 2021-11-04 09:00 |
| 121 | Bug interne - Frontend - Intégrer une colonne Site dans le suivi des imports | 2021-10-14 → 2021-10-14 09:30 | 2021-10-14 → 2021-10-14 18:00 | 1d? → 0.88d? | 131.86d → 115.38d | constraint start no earlier than 2021-10-14 → start no earlier than 2021-10-14 09:00 |
| 122 | Bug interne - Intégrer une colonne Site dans le suivi des imports | 2021-10-13 → 2021-10-13 09:30 | 2021-10-15 → 2021-10-15 18:00 | 3d? → 2.62d? | 130.86d → 114.5d | constraint start no earlier than 2021-10-13 → start no earlier than 2021-10-13 09:00 |
| 123 | Bug interne - Pas de calcul automatique après insertion des valeurs dans les variables formule - Backend | 2021-10-18 → 2021-10-18 09:30 | 2021-10-18 → 2021-10-18 18:00 | 1d? → 0.88d? | 129.86d → 113.62d | constraint start no earlier than 2021-10-18 → start no earlier than 2021-10-18 09:00 |
| 124 | Bug interne - Absence de remontée des alarmes liés à la génération des rapports | 2021-10-20 → 2021-10-20 09:30 | 2021-10-20 → 2021-10-20 15:00 | 0.57d? → 0.5d? | 128.29d → 112.25d | constraint start no earlier than 2021-10-20 → start no earlier than 2021-10-20 09:00 |
| 125 | Bug interne -bug de génération des rapports au PDF en cas de plusieurs onglets | 2021-10-22 → 2021-10-22 09:30 | 2021-10-22 → 2021-10-22 15:00 | 0.57d? → 0.5d? | 126.29d → 110.5d | constraint start no earlier than 2021-10-22 → start no earlier than 2021-10-22 09:00 |
| 126 | Bug interne – Navigation entre les groupes de formulaires | 2021-11-05 → 2021-11-05 09:30 | 2021-11-05 → 2021-11-05 12:30 | 0.43d? → 0.38d? | 116.43d → 101.88d | constraint start no earlier than 2021-11-05 → start no earlier than 2021-11-05 09:00 |
| 127 | Bug interne - Visibilité des imports LIMS limitée par site | 2021-10-20 → 2021-10-20 09:30 | 2021-11-03 → 2021-11-03 18:00 | 7d? → 6.12d? | 117.86d → 103.12d | constraint start no earlier than 2021-10-20 → start no earlier than 2021-10-20 09:00 |
| 128 | Bug interne LIMS - L’import LIMS ne s’effectue pas quand on paramètre plus d’un demandeur | 2021-10-01 → 2021-10-01 09:30 | 2021-10-06 → 2021-10-06 14:30 | 1.5d? → 1.31d? | 138.36d → 121.06d | constraint start no earlier than 2021-10-01 → start no earlier than 2021-10-01 09:00 |
| 129 | Bug interne - Référentiel => Toutes les Variables : Erreur interne si le filtre type variable est activé | 2021-10-07 → 2021-10-07 09:30 | 2021-10-07 → 2021-10-07 12:30 | 0.43d? → 0.38d? | 137.43d → 120.25d | constraint start no earlier than 2021-10-07 → start no earlier than 2021-10-07 09:00 |
| 130 | Bug interne - Impossibilité d'ajouter plus d'un code événement à un bilan sandre - BackEnd | 2021-10-07 → 2021-10-07 09:30 | 2021-10-07 → 2021-10-07 18:00 | 1d? → 0.88d? | 136.86d → 119.75d | constraint start no earlier than 2021-10-07 → start no earlier than 2021-10-07 09:00 |
| 131 | Bug interne - Impossibilité d'ajouter plus d'un code événement à un bilan sandre - FrontEnd | 2021-10-08 → 2021-10-08 09:30 | 2021-10-08 → 2021-10-08 17:00 | 0.86d? → 0.75d? | 136d → 119d | constraint start no earlier than 2021-10-08 → start no earlier than 2021-10-08 09:00 |
| 132 | Bug interne LIMS - Les erreurs Lims ne sont pas remontées | 2021-10-01 A → 2021-10-01 09:00 A | 2021-10-04 → 2021-10-04 12:30 | 1.43d → 1.25d | 140.43d → 122.88d | constraint finish no earlier than 2021-10-04 → finish no earlier than 2021-10-04 18:00 |
| 133 | Bug interne - Ajouts manuels : erreur interne lorsqu'on sélectionne un point de mesure | 2021-10-07 A → 2021-10-07 09:30 A | 2021-10-07 A → 2021-10-07 18:00 A | 1d → 0.88d |  | constraint start no earlier than 2021-10-07 → start no earlier than 2021-10-07 09:00 |
| 134 | Bug interne - Impossibilité d'ajouter une variable à un dossier | 2021-09-23 A → 2021-09-23 09:00 A | 2021-09-29 → 2021-09-29 15:20 |  | 143.24d → 125.33d | constraint start no earlier than 2021-09-23 → start no earlier than 2021-09-23 09:00 |
| 135 | Bug interne - Configuration d'alarme sur variable, données excessives KO | 2021-10-04 A → 2021-10-04 14:00 A | 2021-10-06 A → 2021-10-06 15:00 A | 1d? → 0.88d? |  | constraint start no earlier than 2021-10-04 → start no earlier than 2021-10-04 13:00 |
| 136 | **Version 1.9.0 - 1.9.f** | 2021-09-03 A → 2021-09-03 09:30 A | 2021-12-08 → 2021-12-08 18:00 | 69d? → 60.38d? | 92.86d → 81.25d |  |
| 137 | **Gestion des environnents** | 2021-11-15 → 2021-11-15 09:30 | 2021-11-15 → 2021-11-15 12:30 | 0.43d? → 0.38d? | 110.43d → 96.62d |  |
| 138 | Préparation déploiement de la 1.9.0 | 2021-11-15 → 2021-11-15 09:30 | 2021-11-15 → 2021-11-15 12:30 | 0.43d? → 0.38d? | 110.43d → 96.62d | constraint start no earlier than 2021-11-15 → start no earlier than 2021-11-15 09:00 |
| 139 | **Gestion des données SICK sur l’usine SEC** | 2021-09-22 → 2021-09-22 09:30 | 2021-11-23 → 2021-11-23 15:00 | 44.57d? → 39d? | 104.29d → 91.25d |  |
| 140 | SEC01 - Données 10 min - BackEnd | 2021-09-24 → 2021-09-24 09:30 | 2021-11-18 → 2021-11-18 18:00 | 1.57d? → 1.38d? | 106.86d → 93.5d | constraint start no earlier than 2021-09-24 → start no earlier than 2021-09-24 09:00 |

| ID | Task | Start | Finish | Duration | Total float | Other |
| --- | --- | --- | --- | --- | --- | --- |
| 141 | SEC01 - Données 10 min au sein des formulaires - FrontEnd | 2021-10-05 → 2021-10-05 09:30 | 2021-10-05 → 2021-10-05 14:30 | 0.5d → 0.44d | 139.36d → 121.94d | constraint start no earlier than 2021-10-05 → start no earlier than 2021-10-05 09:00 |
| 142 | SEC01 - Données 10 min sans les formulaires - FrontEnd | 2021-09-27 → 2021-09-27 09:30 | 2021-09-30 → 2021-09-30 14:30 | 2.5d? → 2.19d? | 142.36d → 124.56d | constraint start no earlier than 2021-09-27 → start no earlier than 2021-09-27 09:00 |
| 143 | SEC03 - Gestion des variables de type "durée" - FrontEnd | 2021-11-05 → 2021-11-05 09:30 | 2021-11-05 → 2021-11-05 18:00 | 1d? → 0.88d? | 115.86d → 101.38d | constraint start no earlier than 2021-11-05 → start no earlier than 2021-11-05 09:00 |
| 144 | SEC02 - Données 30 min au sein des formulaires - FrontEnd | 2021-10-05 → 2021-10-05 09:30 | 2021-10-05 → 2021-10-05 14:30 | 0.5d → 0.44d | 139.36d → 121.94d | constraint start no earlier than 2021-10-05 → start no earlier than 2021-10-05 09:00 |
| 145 | SEC02 - Données 30 min - BackEnd | 2021-10-04 → 2021-10-04 14:00 | 2021-10-07 → 2021-10-07 12:30 | 2d → 1.75d | 137.43d → 120.25d | constraint start no earlier than 2021-10-04 → start no earlier than 2021-10-04 13:00 |
| 146 | SEC02 - Données 30 min sans les formulaires - FrontEnd | 2021-09-30 → 2021-09-30 14:30 | 2021-10-06 → 2021-10-06 18:00 | 2.5d? → 2.19d? | 137.86d → 120.62d | constraint start no earlier than 2021-09-30 → start no earlier than 2021-09-30 14:30 |
| 147 | SEC05 - Implémentation de l'import mensuel - Reprise Lamine | 2021-11-08 → 2021-11-08 15:00 | 2021-11-16 → 2021-11-16 18:00 | 4d? → 3.5d? | 108.86d → 95.25d | constraint start no earlier than 2021-11-08 → start no earlier than 2021-11-08 09:00 |
| 148 | SEC04 -Implémentation de l'import quotidien - Reprise Lamine | 2021-11-03 → 2021-11-03 09:30 | 2021-11-08 → 2021-11-08 15:00 | 2.57d? → 2.25d? | 108.86d → 95.25d | constraint start no earlier than 2021-11-03 → start no earlier than 2021-11-03 09:00 |
| 149 | SEC03 - Création des variables fumées + évolution du paramétrage - FrontEnd | 2021-10-05 → 2021-10-05 14:30 | 2021-10-05 → 2021-10-05 18:00 |  | 138.86d → 121.5d | constraint start no earlier than 2021-09-28 → start no earlier than 2021-09-28 09:00 |
| 150 | SEC09 - Nouvel écran d'édition/validation : gestion des statuts supplémentaires | 2021-11-10 → 2021-11-10 09:30 | 2021-11-11 → 2021-11-11 18:00 | 2d? → 1.75d? | 111.86d → 97.88d | constraint start no earlier than 2021-11-10 → start no earlier than 2021-11-10 09:00 |
| 151 | SEC03 - Création des variables fumées + évolution du paramétrage - BackEnd | 2021-09-28 → 2021-09-28 09:30 | 2021-10-05 → 2021-10-05 14:30 | 5.5d → 4.81d | 124.86d → 109.25d | constraint start no earlier than 2021-09-28 → start no earlier than 2021-09-28 09:00 |
| 152 | SEC04 - Implémentation de l'import quotidien - Backend | 2021-10-05 → 2021-10-05 14:30 | 2021-10-18 → 2021-10-18 18:00 | 9d → 7.88d | 124.86d → 109.25d |  |
| 153 | SEC08 - Visualisation des données fumées Nouvel écran d'édition/validation - Backend | 2021-10-28 → 2021-10-28 09:30 | 2021-11-08 → 2021-11-08 18:00 | 5d? → 4.38d? | 114.86d → 100.5d | constraint start no earlier than 2021-10-28 → start no earlier than 2021-10-28 09:00 |
| 154 | SEC10 - Nouvel écran d'édition/validation : associations mesures et valeurs moyennes - Backend | 2021-10-25 → 2021-10-25 09:30 | 2021-11-09 → 2021-11-09 18:00 | 2d? → 1.75d? | 113.86d → 99.62d | constraint start no earlier than 2021-10-25 → start no earlier than 2021-10-25 09:00 |
| 155 | SEC10 - Nouvel écran d'édition/validation : associations mesures et valeurs moyennes - FrontEnd | 2021-10-11 → 2021-10-11 09:30 | 2021-11-04 → 2021-11-04 12:30 | 5d → 4.38d | 117.43d → 102.75d | constraint start no earlier than 2021-10-11 → start no earlier than 2021-10-11 05:00 |
| 156 | SEC05 - Implémentation de l'import mensuel - Backend | 2021-10-19 → 2021-10-19 09:30 | 2021-10-25 → 2021-10-25 18:00 | 5d → 4.38d | 124.86d → 109.25d |  |
| 157 | SEC06 - Création d'un nouveau menu + écran de dossiers de variables fumées - Frontend | 2021-09-22 → 2021-09-22 09:30 | 2021-10-05 → 2021-10-05 12:30 | 3.43d? → 3d? | 139.43d → 122d | constraint start no earlier than 2021-09-22 → start no earlier than 2021-09-22 09:00 |
| 158 | SEC06 - Création d'un nouveau menu + écran de dossiers de variables fumées - Backend | 2021-09-27 → 2021-09-27 15:00 | 2021-10-22 → 2021-10-22 12:30 | 3.29d? → 2.88d? | 126.43d → 110.62d | constraint start no earlier than 2021-09-27 → start no earlier than 2021-09-27 09:00 |
| 159 | SEC07 - Création des dossiers de variables fumées | 2021-10-27 → 2021-10-27 09:30 | 2021-10-27 → 2021-10-27 18:00 | 1d? → 0.88d? | 122.86d → 107.5d | constraint start no earlier than 2021-10-27 → start no earlier than 2021-10-27 09:00 |
| 160 | SEC03 - Aide Florin à Samir | 2021-10-08 → 2021-10-08 15:00 | 2021-10-11 → 2021-10-11 18:00 | 1.43d? → 1.25d? | 134.86d → 118d | constraint start no earlier than 2021-10-08 → start no earlier than 2021-10-08 15:00 |
| 161 | SAV36 - Reprise historique - Bilan Sandre | 2021-11-18 → 2021-11-18 09:30 | 2021-11-23 → 2021-11-23 15:00 | 3d? → 2.62d? | 104.29d → 91.25d | constraint start no earlier than 2021-11-18 → start no earlier than 2021-11-18 09:00 |
| 162 | **Support** | 2021-09-03 → 2021-09-03 09:30 | 2021-10-21 → 2021-10-21 15:00 | 34.57d? → 30.25d? | 127.29d → 111.38d |  |
| 163 | Ticket 1953 – Recherche par nom des imports SFTP et LIMS KO - Frontend | 2021-09-03 → 2021-09-03 09:30 | 2021-09-03 → 2021-09-03 15:00 | 0.57d? → 0.5d? | 161.29d → 141.12d |  |
| 164 | Ticket 1778 - A l'ouverture d'une fiche variable en édition, arrivée sur une page intermédiaire | 2021-10-13 → 2021-10-13 09:30 | 2021-10-13 → 2021-10-13 18:00 | 1d? → 0.88d? | 132.86d → 116.25d | constraint start no earlier than 2021-10-13 → start no earlier than 2021-10-13 09:00 |
| 165 | Bug interne - Ajustements applicatifs nécessaires à la gestion des bilans SAV | 2021-10-20 → 2021-10-20 09:30 | 2021-10-21 → 2021-10-21 15:00 | 1.57d? → 1.38d? | 127.29d → 111.38d | constraint start no earlier than 2021-10-20 → start no earlier than 2021-10-20 09:00 |
| 166 | **Phase d'intégration SAV** | 2021-09-03 A → 2021-09-03 09:30 A | 2021-12-08 → 2021-12-08 18:00 | 69d? → 60.38d? | 92.86d → 81.25d |  |
| 167 | Atelier SAV n°3 | 2021-09-23 A → 2021-09-23 09:00 A | 2021-09-23 A → 2021-09-23 12:30 A |  |  | constraint start no earlier than 2021-09-23 → start no earlier than 2021-09-23 09:00 |
| 168 | Atelier SAV n°5 | 2021-11-09 → 2021-11-09 09:30 | 2021-11-09 → 2021-11-09 18:00 | 1d? → 0.88d? | 113.86d → 99.62d | constraint start no earlier than 2021-11-09 → start no earlier than 2021-11-09 09:00 |
| 169 | Atelier SAV n°4 | 2021-09-27 A → 2021-09-27 09:00 A | 2021-09-27 A → 2021-09-27 14:30 A |  |  | constraint start no earlier than 2021-09-27 → start no earlier than 2021-09-27 09:00 |
| 170 | SAV04 - Variables de type quart d'heure - FrontEnd | 2021-10-07 → 2021-10-07 09:30 | 2021-10-08 → 2021-10-08 15:00 | 1d? → 0.88d? | 136.29d → 119.25d | constraint start no earlier than 2021-10-07 → start no earlier than 2021-10-07 09:00 |
| 171 | SAV05-Variables de type minute - Backend | 2021-09-22 → 2021-09-22 15:00 | 2021-10-28 → 2021-10-28 18:00 | 3.43d? → 3d? | 121.86d → 106.62d | constraint start no earlier than 2021-09-22 → start no earlier than 2021-09-22 15:00 |
| 172 | SAV05-Variables de type minute - Frontend | 2021-09-03 → 2021-09-03 09:30 | 2021-10-21 → 2021-10-21 18:00 | 4.57d → 4d | 126.86d → 111d |  |
| 173 | SAV19 - Formulaires personnalisables / Possibilité de figer les tailles des colonnes ou des lignes | 2021-09-24 → 2021-09-24 09:30 | 2021-09-30 → 2021-09-30 18:00 | 5d → 4.38d | 141.86d → 124.12d | constraint start no earlier than 2021-09-24 → start no earlier than 2021-09-24 09:00 |
| 174 | SAV10 - Ajout de fonctions de calcul - UX/UI | 2021-09-23 → 2021-09-23 09:30 | 2021-09-27 → 2021-09-27 18:00 | 3d → 2.62d | 144.86d → 126.75d | constraint start no earlier than 2021-09-23 → start no earlier than 2021-09-23 09:00 |
| 175 | SAV11 - Ajout de fonctions de calcul / Intégration des calculs dateheure - Backend | 2021-10-04 → 2021-10-04 09:30 | 2021-10-25 → 2021-10-25 18:00 | 4.71d? → 4.12d? | 124.86d → 109.25d | constraint start no earlier than 2021-10-04 → start no earlier than 2021-10-04 09:00 |
| 176 | SAV29 - Import de la cartographie des variables dans Aquedi | 2021-09-29 → 2021-09-29 09:30 | 2021-09-29 → 2021-09-29 15:00 | 0.57d → 0.5d | 143.29d → 125.38d | constraint start no earlier than 2021-09-29 → start no earlier than 2021-09-29 09:00 |
| 177 | SAV27 - Duplication des variables multi-période | 2021-09-28 → 2021-09-28 09:30 | 2021-09-29 → 2021-09-29 12:30 | 1d? → 0.88d? | 143.43d → 125.5d | constraint start no earlier than 2021-09-28 → start no earlier than 2021-09-28 09:00 |
| 178 | Nouvelle gestion des périodes d’agrégation | 2021-10-29 → 2021-10-29 09:30 | 2021-11-19 → 2021-11-19 18:00 | 5d? → 4.38d? | 105.86d → 92.62d | constraint start no earlier than 2021-10-29 → start no earlier than 2021-10-29 09:00 |
| 179 | SAV36 - Reprise historique - Bilan Sandre | 2021-09-03 → 2021-09-03 09:30 | 2021-09-03 → 2021-09-03 18:00 | 1d? → 0.88d? | 160.86d → 140.75d |  |
| 180 | SAV25 - Import des saisies manuelles et des données laboratoire | 2021-09-30 → 2021-09-30 09:30 | 2021-12-08 → 2021-12-08 14:30 | 13.86d → 12.12d | 93.36d → 81.69d | constraint start no earlier than 2021-09-30 → start no earlier than 2021-09-30 09:00 |
| 181 | SAV31 -Sylvain - Implémentation des variables calculées suite à l’ajout des fonctions de Basta | 2021-11-24 → 2021-11-24 09:30 | 2021-12-08 → 2021-12-08 15:00 | 3.57d? → 3.12d? | 93.29d → 81.62d | constraint start no earlier than 2021-11-24 → start no earlier than 2021-11-24 09:00 |
| 182 | SAV31 - Lamine - Implémentation des variables calculées suite à l’ajout des fonctions de Basta | 2021-10-29 → 2021-10-29 09:30 | 2021-11-19 → 2021-11-19 18:00 | 4.14d? → 3.62d? | 105.86d → 92.62d | constraint start no earlier than 2021-10-29 → start no earlier than 2021-10-29 09:00 |
| 183 | SAV10 - Ajout de fonctions de calcul - Frontend | 2021-10-05 A → 2021-10-05 13:00 A | 2021-12-08 A → 2021-12-08 18:00 A | 8d → 7d |  | constraint finish no earlier than 2021-10-07 → finish no earlier than 2021-10-07 18:00 |
| 184 | **Version 1.9.1** | 2021-10-15 → 2021-10-15 09:30 | 2022-03-01 → 2022-03-01 12:30 | 97.43d? → 85.25d? | 34.43d → 30.12d |  |
| 185 | Déploiement / intégration 1.9.1 | 2022-02-07 → 2022-02-07 09:30 | 2022-02-08 → 2022-02-08 12:30 | 1.43d? → 1.25d? | 46.86d → 41d | constraint start no earlier than 2022-02-07 → start no earlier than 2022-02-07 09:00 |
| 186 | **Phase d'intégration SAV** | 2021-11-22 → 2021-11-22 09:30 | 2022-02-23 → 2022-02-23 18:00 | 68d? → 59.5d? | 37.86d → 33.12d |  |
| 187 | SAV12 - Frontend - Précisions des calculs / Gestion des niveaux d’arrondis au sein de l'application web | 2021-12-29 → 2021-12-29 09:30 | 2021-12-29 → 2021-12-29 18:00 | 1d? → 0.88d? | 77.86d → 68.12d | constraint start no earlier than 2021-12-29 → start no earlier than 2021-12-29 09:00 |
| 188 | SAV12 - Backend - Précisions des calculs / Gestion des niveaux d’arrondis au sein de l'application web | 2021-12-07 → 2021-12-07 09:30 | 2022-01-25 → 2022-01-25 18:00 | 12.14d? → 10.62d? | 58.86d → 51.5d | constraint start no earlier than 2021-12-07 → start no earlier than 2021-12-07 08:00 |
| 189 | SAV13 - Précisions des calculs / Gestion des niveaux d’arrondis au sein des bilans | 2021-12-31 → 2021-12-31 09:30 | 2022-01-27 → 2022-01-27 18:00 | 9.57d? → 8.38d? | 56.86d → 49.75d | constraint start no earlier than 2021-12-31 → start no earlier than 2021-12-31 03:00 |
| 190 | SAV13 - Tests - Précisions des calculs / Gestion des niveaux d’arrondis au sein des bilans | 2022-01-28 → 2022-01-28 09:30 | 2022-01-28 → 2022-01-28 18:00 | 1d? → 0.88d? | 55.86d → 48.88d | constraint start no earlier than 2022-01-28 → start no earlier than 2022-01-28 09:00 |
| 191 | SAV12 - Tests - Précisions des calculs / Gestion des niveaux d’arrondis au sein de l'application web | 2022-01-27 → 2022-01-27 09:30 | 2022-01-27 → 2022-01-27 18:00 | 1d? → 0.88d? | 56.86d → 49.75d | constraint start no earlier than 2022-01-27 → start no earlier than 2022-01-27 09:00 |
| 192 | SAV15 - Tests - Correction des mesures erronées - Lamine | 2022-02-14 → 2022-02-14 09:30 | 2022-02-14 → 2022-02-14 18:00 | 1d? → 0.88d? | 44.86d → 39.25d | constraint start no earlier than 2022-02-14 → start no earlier than 2022-02-14 09:00 |
| 193 | SAV15 - Tests - Correction des mesures erronées - Benoit | 2022-02-03 → 2022-02-03 09:30 | 2022-02-03 → 2022-02-03 18:00 | 1d? → 0.88d? | 51.86d → 45.38d | constraint start no earlier than 2022-02-03 → start no earlier than 2022-02-03 08:00 |
| 194 | SAV15 - Frontend - Correction des mesures erronées | 2022-01-26 → 2022-01-26 09:30 | 2022-02-01 → 2022-02-01 18:00 | 3d? → 2.62d? | 53.86d → 47.12d | constraint start no earlier than 2022-01-26 → start no earlier than 2022-01-26 09:00 |
| 195 | SAV15 - Backend - Correction des mesures erronées | 2022-01-28 → 2022-01-28 09:30 | 2022-02-03 → 2022-02-03 15:00 | 4.57d? → 4d? | 52.29d → 45.75d | constraint start no earlier than 2022-01-28 → start no earlier than 2022-01-28 08:00 |
| 196 | SAV20 - Gestion des données invalides | 2022-01-05 → 2022-01-05 09:30 | 2022-02-21 → 2022-02-21 18:00 | 6.43d? → 5.62d? | 39.86d → 34.88d | constraint start no earlier than 2022-01-05 → start no earlier than 2022-01-05 09:00 |
| 197 | SAV23 - Modélisation des bilans Sandre [Chgt Sélection] - Florin | 2022-01-10 → 2022-01-10 09:30 | 2022-02-02 → 2022-02-02 12:30 | 7.43d? → 6.5d? | 53.43d → 46.75d | constraint start no earlier than 2022-01-10 → start no earlier than 2022-01-10 09:00 |
| 198 | SAV23 - Modélisation des bilans Sandre [Chgt Sélection] - Sylvain | 2022-01-06 → 2022-01-06 09:30 | 2022-01-11 → 2022-01-11 18:00 | 4d? → 3.5d? | 68.86d → 60.25d | constraint start no earlier than 2022-01-06 → start no earlier than 2022-01-06 07:00 |
| 199 | SAV36 - 1.9.1 - Reprise de dumps et migration de données de Basta à Aquedi | 2022-01-31 → 2022-01-31 09:30 | 2022-02-02 → 2022-02-02 18:00 | 3d? → 2.62d? | 52.86d → 46.25d | constraint start no earlier than 2022-01-31 → start no earlier than 2022-01-31 06:00 |
| 200 | SAV07 - Impact des nouveaux types de variables sur les imports / Optimisation du code | 2022-01-18 → 2022-01-18 09:30 | 2022-02-23 → 2022-02-23 18:00 | 11.71d? → 10.25d? | 37.86d → 33.12d | constraint start no earlier than 2022-01-18 → start no earlier than 2022-01-18 05:00 |
| 201 | SAV30 - Validation paramétrage et tests des imports / Imports binaires et SFTP | 2021-11-22 → 2021-11-22 09:30 | 2021-12-31 → 2021-12-31 18:00 | 1.43d? → 1.25d? | 75.86d → 66.38d | constraint start no earlier than 2021-11-22 → start no earlier than 2021-11-22 09:00 |
| 202 | **Support** | 2021-10-15 → 2021-10-15 09:30 | 2022-03-01 → 2022-03-01 12:30 | 97.43d? → 85.25d? | 34.43d → 30.12d |  |
| 203 | Ticket 2372 - Reprise de données : Variable heure calculée fausse | 2022-02-28 → 2022-02-28 14:00 | 2022-03-01 → 2022-03-01 12:30 | 1d? → 0.88d? | 33.43d → 29.25d | constraint start no earlier than 2022-02-28 → start no earlier than 2022-02-28 09:00 |
| 204 | Ticket 1921 – Données inférieures à la Lq non prises en compte lors d'un import LIMS | 2021-12-02 → 2021-12-02 09:30 | 2022-02-04 → 2022-02-04 18:00 | 5.43d? → 4.75d? | 50.86d → 44.5d | constraint start no earlier than 2021-12-02 → start no earlier than 2021-12-02 06:00 |
| 205 | Ticket 2221 - Edition/validation - Copier coller des valeurs textes KO | 2022-01-21 → 2022-01-21 09:30 | 2022-01-24 → 2022-01-24 18:00 | 2d? → 1.75d? | 59.86d → 52.38d | constraint start no earlier than 2022-01-21 → start no earlier than 2022-01-21 09:00 |
| 206 | Ticket 2086 – Implémentation d’une formule de type moyenne sans zéros | 2022-02-02 → 2022-02-02 09:30 | 2022-02-03 → 2022-02-03 18:00 | 2d? → 1.75d? | 23.43d → 20.5d | constraint start no earlier than 2022-02-02 → start no earlier than 2022-02-02 06:00 |
| 207 | Ticket 2082 - Edition des données : export ne prenant pas en compte les dates sans valeur | 2022-01-12 → 2022-01-12 09:30 | 2022-01-12 → 2022-01-12 18:00 | 1d? → 0.88d? | 67.86d → 59.38d | constraint start no earlier than 2022-01-12 → start no earlier than 2022-01-12 09:00 |
| 208 | Ticket 2073 - Edition des données : export Excel et PDF des valeurs texte avec balises | 2022-01-14 → 2022-01-14 09:30 | 2022-01-14 → 2022-01-14 12:30 | 0.43d? → 0.38d? | 66.43d → 58.12d | constraint start no earlier than 2022-01-14 → start no earlier than 2022-01-14 09:00 |
| 209 | Ticket 2097 - Edition des données : exports Excel et PDF des valeurs quart d'heure de 00:00 à 23:45 au lieu de 07:15 à 07:00 | 2022-01-03 → 2022-01-03 09:30 | 2022-01-03 → 2022-01-03 18:00 | 1d? → 0.88d? | 74.86d → 65.5d | constraint start no earlier than 2022-01-03 → start no earlier than 2022-01-03 09:00 |
| 210 | Ticket 2028 - Optimisation du module des formulaires 1.8.6 | 2022-01-18 → 2022-01-18 09:30 | 2022-01-21 → 2022-01-21 18:00 | 4d? → 3.5d? | 60.86d → 53.25d | constraint start no earlier than 2022-01-18 → start no earlier than 2022-01-18 09:00 |

| ID | Task | Start | Finish | Duration | Total float | Other |
| --- | --- | --- | --- | --- | --- | --- |
| 211 | Ticket 2088 - Reprise de données BaSta : valeurs absentes pour les variables J4BMNBM02_Q et J4BMNBM01_Q | 2021-12-30 → 2021-12-30 09:30 | 2021-12-30 → 2021-12-30 18:00 | 1d? → 0.88d? | 76.86d → 67.25d | constraint start no earlier than 2021-12-30 → start no earlier than 2021-12-30 09:00 |
| 212 | Ticket 2078 - Problème de génération de Bilan | 2021-12-28 → 2021-12-28 09:30 | 2021-12-28 → 2021-12-28 18:00 | 1d? → 0.88d? | 78.86d → 69d | constraint start no earlier than 2021-12-28 → start no earlier than 2021-12-28 09:00 |
| 213 | Ticket 2072 - Edition des données : valeur texte non visible complètement | 2022-01-03 → 2022-01-03 09:30 | 2022-01-03 → 2022-01-03 18:00 | 1d? → 0.88d? | 74.86d → 65.5d | constraint start no earlier than 2022-01-03 → start no earlier than 2022-01-03 09:00 |
| 214 | Ticket 2044 - Backend - Formulaires Lot A BaSta : absents, incomplet et sans affichage des données | 2021-12-29 → 2021-12-29 09:30 | 2021-12-29 → 2021-12-29 18:00 | 1d? → 0.88d? | 77.86d → 68.12d | constraint start no earlier than 2021-12-29 → start no earlier than 2021-12-29 09:00 |
| 215 | Ticket 2098 - Edition des données : export PDF des valeurs quart d'heure et minute sans précision de l'heure | 2022-01-04 → 2022-01-04 09:30 | 2022-01-04 → 2022-01-04 18:00 | 1d? → 0.88d? | 73.86d → 64.62d | constraint start no earlier than 2022-01-04 → start no earlier than 2022-01-04 09:00 |
| 216 | Ticket 1962 - Impossibilité de supprimer une valeur alors que le bouton l'autorise | 2022-01-25 → 2022-01-25 09:30 | 2022-01-25 → 2022-01-25 18:00 | 1d? → 0.88d? | 58.86d → 51.5d | constraint start no earlier than 2022-01-25 → start no earlier than 2022-01-25 09:00 |
| 217 | Ticket 2068 - Reprise de données BaSta : valeurs des variables Date incorrectes | 2022-02-04 → 2022-02-04 09:30 | 2022-02-04 → 2022-02-04 18:00 | 1d? → 0.88d? | 50.86d → 44.5d | constraint start no earlier than 2022-02-04 → start no earlier than 2022-02-04 06:00 |
| 218 | Ticket 2086 - Frontend - Nouvelle formule de calcul : moyenne sans zéros | 2022-02-04 → 2022-02-04 14:00 | 2022-02-09 → 2022-02-09 18:00 | 2.57d? → 2.25d? | 47.86d → 41.88d | constraint start no earlier than 2022-02-04 → start no earlier than 2022-02-04 13:00 |
| 219 | Ticket 1958 - Validation des données via les formulaires - Réduction de la plage de date par défaut | 2021-11-09 → 2021-11-09 09:30 | 2021-11-09 → 2021-11-09 18:00 | 1d? → 0.88d? | 113.86d → 99.62d | constraint start no earlier than 2021-11-09 → start no earlier than 2021-11-09 09:00 |
| 220 | Ticket 2043 - Reprise de données BaSta : valeur ayant un statut Invalide alors qu'elle a été modifiée dans BaSta | 2022-01-12 → 2022-01-12 09:30 | 2022-01-12 → 2022-01-12 18:00 | 1d? → 0.88d? | 67.86d → 59.38d | constraint start no earlier than 2022-01-12 → start no earlier than 2022-01-12 09:00 |
| 221 | Bug interne – Problème de performances+bugs à l’édition des données fumées | 2021-11-22 → 2021-11-22 09:30 | 2021-11-23 → 2021-11-23 18:00 | 2d? → 1.75d? | 103.86d → 90.88d | constraint start no earlier than 2021-11-22 → start no earlier than 2021-11-22 05:00 |
| 222 | Ticket interne 2192 - Correctifs données fumées post 1.9.0.2 Bug C- Génération de bilans avec variables de type durée KO | 2022-01-19 → 2022-01-19 09:30 | 2022-01-19 → 2022-01-19 18:00 | 1d? → 0.88d? | 62.86d → 55d | constraint start no earlier than 2022-01-19 → start no earlier than 2022-01-19 09:00 |
| 223 | Ticket 2333 - Connection impossible au service LIMS | 2022-01-25 → 2022-01-25 09:30 | 2022-02-03 → 2022-02-03 12:30 | 2.43d? → 2.12d? | 52.43d → 45.88d | constraint start no earlier than 2022-01-25 → start no earlier than 2022-01-25 09:00 |
| 224 | Ticket 2166 - Erreur lors de l'import d'un fichier binaire | 2022-01-14 → 2022-01-14 09:30 | 2022-01-17 → 2022-01-17 18:00 | 1.57d? → 1.38d? | 64.86d → 56.75d | constraint start no earlier than 2022-01-14 → start no earlier than 2022-01-14 09:00 |
| 225 | Ticket 2093 - Bilan Lot 0A BaSta : valeurs Heures en partie fausses dans l'onglet Global_Cuves pour le bilan 1025-Mb_BM_Suivi global membranes | 2022-01-13 → 2022-01-13 09:30 | 2022-01-13 → 2022-01-13 18:00 | 1d? → 0.88d? | 66.86d → 58.5d | constraint start no earlier than 2022-01-13 → start no earlier than 2022-01-13 09:00 |
| 226 | Incident 1605 – La reproduction de la valeur precedente ne fonctionne pas | 2021-10-15 → 2021-10-15 09:30 | 2021-12-01 → 2021-12-01 18:00 | 4d? → 3.5d? | 97.86d → 85.62d | constraint start no earlier than 2021-10-15 → start no earlier than 2021-10-15 09:00 |
| 227 | **Version 1.9.2** | 2021-09-03 → 2021-09-03 09:30 | 2022-04-07 → 2022-04-07 18:00 | 155d? → 135.62d? | 6.86d → 6d |  |
| 228 | **Evolutions SAV** | 2021-09-03 → 2021-09-03 09:30 | 2022-04-06 → 2022-04-06 12:30 | 153.43d? → 134.25d? | 8.43d → 7.38d |  |
| 229 | SAV14 - Frontend - Variables calculées liée à une procédure stockée | 2021-09-03 → 2021-09-03 09:30 | 2021-09-03 → 2021-09-03 18:00 | 1d? → 0.88d? | 160.86d → 140.75d |  |
| 230 | SAV08 - Impact des nouveaux types de variables sur les imports / Optimisation de la base de donnée | 2021-12-13 → 2021-12-13 09:30 | 2022-02-25 → 2022-02-25 18:00 | 13.14d? → 11.5d? | 35.86d → 31.38d | constraint start no earlier than 2021-12-13 → start no earlier than 2021-12-13 09:00 |
| 231 | SAV21 - Frontend - Menu arborescent | 2022-03-02 → 2022-03-02 09:30 | 2022-04-04 → 2022-04-04 18:00 | 16.14d? → 14.12d? | 7.43d → 6.5d | constraint start no earlier than 2022-03-02 → start no earlier than 2022-03-02 09:00 |
| 232 | SAV14 - Backend - Variables calculées liée à une procédure stockée | 2022-03-04 → 2022-03-04 14:00 | 2022-04-06 → 2022-04-06 12:30 | 6d? → 5.25d? | 8.43d → 7.38d | constraint start no earlier than 2022-03-04 → start no earlier than 2022-03-04 13:00 |
| 233 | SAV34 - Florin - Matrice des droits | 2022-03-30 → 2022-03-30 09:30 | 2022-04-05 → 2022-04-05 18:00 | 5d? → 4.38d? | 8.86d → 7.75d | constraint start no earlier than 2022-03-30 → start no earlier than 2022-03-30 09:00 |
| 234 | SAV34 - Sylvain - Matrice des droits | 2022-03-25 → 2022-03-25 14:00 | 2022-03-28 → 2022-03-28 12:30 | 1d? → 0.88d? | 10.43d → 9.12d | constraint start no earlier than 2022-03-25 → start no earlier than 2022-03-25 13:00 |
| 235 | SAV21 - Backend - Menu arborescent | 2022-02-07 → 2022-02-07 09:30 | 2022-03-24 → 2022-03-24 12:30 | 19d? → 16.62d? | 13.86d → 12.12d | constraint start no earlier than 2022-02-07 → start no earlier than 2022-02-07 09:00 |
| 236 | **Intégration SAV - Reprise du dump** | 2022-03-31 → 2022-03-31 09:30 | 2022-04-05 → 2022-04-05 15:00 | 3.57d? → 3.12d? | 9.29d → 8.12d |  |
| 237 | Reprise du paramétrage des variables de Basta | 2022-03-31 → 2022-03-31 09:30 | 2022-03-31 → 2022-03-31 12:30 | 0.43d? → 0.38d? | 9.29d → 8.12d | constraint start no earlier than 2022-03-31 → start no earlier than 2022-03-31 08:00 |
| 238 | Extraction des données de variable et de leur statut de la base de données de BaSta | 2022-03-31 → 2022-03-31 14:00 | 2022-03-31 → 2022-03-31 18:00 | 0.57d? → 0.5d? | 9.29d → 8.12d |  |
| 239 | Vérification des injections des données | 2022-04-01 → 2022-04-01 09:30 | 2022-04-01 → 2022-04-01 18:00 | 1d? → 0.88d? | 9.29d → 8.12d | constraint start no earlier than 2022-04-01 → start no earlier than 2022-04-01 09:00 |
| 240 | Vérification du bon déroulement des imports SFTP standard, binaires, de saisies manuelles | 2022-04-04 → 2022-04-04 09:30 | 2022-04-05 → 2022-04-05 15:00 | 1.57d? → 1.38d? | 9.29d → 8.12d |  |
| 241 | **Support** | 2021-12-27 → 2021-12-27 09:30 | 2022-04-07 → 2022-04-07 18:00 | 74d? → 64.75d? | 6.86d → 6d |  |
| 242 | Ticket 2230 - Lamine - Impossible de dupliquer une variables LIMS | 2022-02-17 → 2022-02-17 09:30 | 2022-02-17 → 2022-02-17 18:00 | 1d? → 0.88d? | 41.86d → 36.62d | constraint start no earlier than 2022-02-17 → start no earlier than 2022-02-17 09:00 |
| 243 | Ticket 2230 - Benoit - Impossible de dupliquer une variables LIMS | 2022-03-30 → 2022-03-30 09:30 | 2022-03-30 → 2022-03-30 12:30 | 0.43d? → 0.38d? | 13.43d → 11.75d | constraint start no earlier than 2022-03-30 → start no earlier than 2022-03-30 09:00 |
| 244 | Ticket 2230 - Bilal - Impossible de dupliquer une variables LIMS | 2022-03-24 → 2022-03-24 09:30 | 2022-03-30 → 2022-03-30 18:00 | 2.57d? → 2.25d? | 12.86d → 11.25d | constraint start no earlier than 2022-03-24 → start no earlier than 2022-03-24 09:00 |
| 245 | Ticket 2165 - Import Supervision SAV : valeurs de la variable J4GDRDGTAG1 divisées par 100 dans Aquedi par rapport à BaSta pour le 10/12/2021 | 2022-03-29 → 2022-03-29 09:30 | 2022-03-29 → 2022-03-29 12:30 | 0.43d? → 0.38d? | 14.43d → 12.62d | constraint start no earlier than 2022-03-29 → start no earlier than 2022-03-29 09:00 |
| 246 | Ticket 2656 - Passage à l'heure d'été : fichiers supervisions en erreur | 2022-03-30 → 2022-03-30 09:30 | 2022-03-30 → 2022-03-30 18:00 | 1d? → 0.88d? | 12.86d → 11.25d | constraint start no earlier than 2022-03-30 → start no earlier than 2022-03-30 09:00 |
| 247 | Ticket 2164 - Supervision SAV : pour la variable J4OPCHG2, des valeurs sont affichées dans Aquedi pour le 10/12/2021 alors qu'il n'y en a pas dans BaSta | 2022-03-29 → 2022-03-29 09:30 | 2022-03-29 → 2022-03-29 15:00 | 0.57d? → 0.5d? | 14.29d → 12.5d | constraint start no earlier than 2022-03-29 → start no earlier than 2022-03-29 09:00 |
| 248 | Ticket 2081 - Reprise de données BaSta : variables de Type "Liste déroulante" non déclarées dans Aquedi en tant que variable ayant une "Liste de valeurs" | 2022-01-05 → 2022-01-05 09:30 | 2022-02-14 → 2022-02-14 18:00 | 2.43d? → 2.12d? | 44.86d → 39.25d | constraint start no earlier than 2022-01-05 → start no earlier than 2022-01-05 09:00 |
| 249 | Ticket 2227 - Problème avec le statut de la donnée _ préprod 1.9.0.3 | 2022-02-22 → 2022-02-22 09:30 | 2022-02-22 → 2022-02-22 18:00 | 1d? → 0.88d? | 38.86d → 34d | constraint start no earlier than 2022-02-22 → start no earlier than 2022-02-22 09:00 |
| 250 | Ticket 2374 - Backend - INTERNE Hiérarchisation des droits utilisateurs | 2022-02-16 → 2022-02-16 09:30 | 2022-02-17 → 2022-02-17 18:00 | 2d? → 1.75d? | 40.86d → 35.75d | constraint start no earlier than 2022-02-16 → start no earlier than 2022-02-16 09:00 |
| 251 | Ticket 2219 - Liste des évènements : la purge ne fonctionne pas | 2022-02-18 → 2022-02-18 09:30 | 2022-02-18 → 2022-02-18 18:00 | 1d? → 0.88d? | 40.86d → 35.75d | constraint finish no earlier than 2022-02-18 → finish no earlier than 2022-02-18 18:00 |
| 252 | Ticket 2100 - Alarmes | 2022-02-23 → 2022-02-23 09:30 | 2022-02-24 → 2022-02-24 15:00 | 1.57d? → 1.38d? | 37.29d → 32.62d | constraint start no earlier than 2022-02-23 → start no earlier than 2022-02-23 09:00 |
| 253 | Ticket 2508 - Frontend - INTERNE - LQ pas affiché dans l'historique lors d'une création de variable | 2022-03-03 → 2022-03-03 09:30 | 2022-03-04 → 2022-03-04 12:30 | 1.43d? → 1.25d? | 31.43d → 27.5d | constraint start no earlier than 2022-03-03 → start no earlier than 2022-03-03 09:00 |
| 254 | Ticket 2658 - INTERNE - Bug sur sur une formule de modélisation pour les bilans mensuels | 2022-03-25 → 2022-03-25 09:30 | 2022-03-28 → 2022-03-28 18:00 | 2d? → 1.75d? | 14.86d → 13d | constraint start no earlier than 2022-03-25 → start no earlier than 2022-03-25 09:00 |
| 255 | Ticket 2589 - Florin - Bilans MAV impossibles à générer | 2022-03-17 → 2022-03-17 09:30 | 2022-03-24 → 2022-03-24 18:00 | 4d? → 3.5d? | 16.86d → 14.75d | constraint start no earlier than 2022-03-17 → start no earlier than 2022-03-17 08:00 |
| 256 | Ticket 2508 - Backend - INTERNE - LQ pas affiché dans l'historique lors d'une création de variable | 2022-02-28 → 2022-02-28 09:30 | 2022-03-01 → 2022-03-01 12:30 | 1.43d? → 1.25d? | 1.43d → 1.25d | constraint start no earlier than 2022-02-28 → start no earlier than 2022-02-28 06:00 |
| 257 | Ticket 2589 - Bilal - Bilans MAV impossibles à générer | 2022-03-18 → 2022-03-18 09:30 | 2022-03-18 → 2022-03-18 18:00 | 1d? → 0.88d? | 20.86d → 18.25d | constraint start no earlier than 2022-03-18 → start no earlier than 2022-03-18 06:00 |
| 258 | Ticket 2586 - Bilal - Import LIMS SEM et MAV KO | 2022-03-17 → 2022-03-17 09:30 | 2022-03-17 → 2022-03-17 18:00 | 1d? → 0.88d? | 21.86d → 19.12d | constraint start no earlier than 2022-03-17 → start no earlier than 2022-03-17 09:00 |
| 259 | Ticket 1890 - Bilal - Accès à tous les droits de tous les sites | 2022-02-25 → 2022-02-25 09:30 | 2022-03-16 → 2022-03-16 18:00 | 3.57d? → 3.12d? | 22.86d → 20d | constraint start no earlier than 2022-02-25 → start no earlier than 2022-02-25 09:00 |
| 260 | Ticket 2063 – Backend - Edition des données : toutes les valeurs ne sont pas visibles / Dette technique – Refonte de l’écran Edition/Validation | 2022-01-13 → 2022-01-13 09:30 | 2022-04-07 → 2022-04-07 18:00 | 6.43d? → 5.62d? | 6.86d → 6d | constraint start no earlier than 2022-01-13 → start no earlier than 2022-01-13 09:00 |
| 261 | Ticket 1890 - Lamine - Accès à tous les droits de tous les sites | 2022-03-24 → 2022-03-24 14:00 | 2022-03-29 → 2022-03-29 18:00 | 3.14d? → 2.75d? | 13.86d → 12.12d | constraint start no earlier than 2022-03-22 → start no earlier than 2022-03-22 09:00 |
| 262 | Ticket 1823 - Large visualisation des données sur l'écran édition/validation | 2022-04-05 → 2022-04-05 09:30 | 2022-04-07 → 2022-04-07 12:30 | 2.43d? → 2.12d? | 7.43d → 6.5d | constraint start no earlier than 2021-09-03 → start no earlier than 2021-09-03 09:00 |
| 263 | Ticket 2374 - FrontEnd - INTERNE Hiérarchisation des droits utilisateurs | 2022-03-14 → 2022-03-14 09:30 | 2022-03-14 → 2022-03-14 18:00 | 1d? → 0.88d? | 24.86d → 21.75d | constraint start no earlier than 2022-03-14 → start no earlier than 2022-03-14 09:00 |
| 264 | Ticket 2063 – Frontend - Edition des données : toutes les valeurs ne sont pas visibles / Dette technique – Refonte de l’écran Edition/Validation | 2021-12-27 → 2021-12-27 09:30 | 2022-02-28 → 2022-02-28 18:00 | 21d? → 18.38d? | 34.86d → 30.5d | constraint start no earlier than 2021-12-27 → start no earlier than 2021-12-27 09:00 |
| 265 | **Dette technique** | 2022-02-04 → 2022-02-04 09:30 | 2022-04-05 → 2022-04-05 18:00 | 43d? → 37.62d? | 8.86d → 7.75d |  |
| 266 | Ticket 2590 - INTERNE - Décorrélation entre les droits et la classification des documents | 2022-03-09 → 2022-03-09 09:30 | 2022-04-05 → 2022-04-05 18:00 | 10d? → 8.75d? | 8.86d → 7.75d | constraint start no earlier than 2022-03-09 → start no earlier than 2022-03-09 09:00 |
| 267 | Ticket interne 2193 - Frontend - Export automatique vers un espace de stockage partagé + import | 2022-02-17 → 2022-02-17 14:00 | 2022-03-11 → 2022-03-11 12:30 | 2.43d? → 2.12d? | 26.43d → 23.12d | constraint start no earlier than 2022-02-17 → start no earlier than 2022-02-17 13:00 |
| 268 | Ticket interne 2193 - Backend - Export automatique vers un espace de stockage partagé + Import | 2022-02-04 → 2022-02-04 09:30 | 2022-03-16 → 2022-03-16 12:30 | 6.43d? → 5.62d? | 23.43d → 20.5d | constraint start no earlier than 2022-01-21 → start no earlier than 2022-01-21 09:00 |
| 269 | **Autres** | 2022-02-08 → 2022-02-08 14:00 | 2022-03-30 → 2022-03-30 15:00 | 36.14d? → 31.62d? | 13.29d → 11.62d |  |
| 270 | Aide présentation Ben sur les droits - Benoit | 2022-03-30 → 2022-03-30 09:30 | 2022-03-30 → 2022-03-30 15:00 | 0.57d? → 0.5d? | 13.29d → 11.62d | constraint start no earlier than 2022-03-30 → start no earlier than 2022-03-30 09:00 |
| 271 | Présentation Stratégie Edouard Paletou | 2022-03-28 → 2022-03-28 09:30 | 2022-03-28 → 2022-03-28 12:30 | 0.43d? → 0.38d? | 15.43d → 13.5d | constraint start no earlier than 2022-03-28 → start no earlier than 2022-03-28 09:00 |
| 272 | Congé parental - Lamine | 2022-02-21 → 2022-02-21 09:30 | 2022-02-23 → 2022-02-23 18:00 | 3d? → 2.62d? | 37.86d → 33.12d | constraint start no earlier than 2022-02-21 → start no earlier than 2022-02-21 09:00 |
| 273 | Ticket 2640 - Problèmes lenteurs serveurs de test | 2022-03-23 → 2022-03-23 09:30 | 2022-03-28 → 2022-03-28 15:00 | 1.57d? → 1.38d? | 15.29d → 13.38d | constraint start no earlier than 2022-03-23 → start no earlier than 2022-03-23 09:00 |
| 274 | Livraison MCD Aquedi | 2022-03-08 → 2022-03-08 15:00 | 2022-03-09 → 2022-03-09 18:00 | 1.43d? → 1.25d? | 27.86d → 24.38d | constraint start no earlier than 2022-03-08 → start no earlier than 2022-03-08 09:00 |
| 275 | Management Equipe | 2022-02-08 → 2022-02-08 14:00 | 2022-02-10 → 2022-02-10 18:00 | 2.57d? → 2.25d? | 46.86d → 41d | constraint start no earlier than 2022-02-08 → start no earlier than 2022-02-08 12:00 |
| 276 | **Version 1.9.0.1** | 2021-09-30 A → 2021-09-30 09:30 A | 2021-12-17 → 2021-12-17 18:00 | 57d? → 49.88d? | 85.86d → 75.12d |  |
| 277 | **Déploiement SAV - Début marche en double** | 2021-11-22 → 2021-11-22 09:30 | 2021-12-03 → 2021-12-03 18:00 | 10d? → 8.75d? | 95.86d → 83.88d |  |
| 278 | Vérification des simulations | 2021-11-29 → 2021-11-29 09:30 | 2021-11-29 → 2021-11-29 18:00 | 1d? → 0.88d? | 99.86d → 87.38d | constraint start no earlier than 2021-11-29 → start no earlier than 2021-11-29 09:00 |
| 279 | Simulation de l'Injection des données autre que les valeurs dans la base d’AQUEDI sur un environnement de tests de Studia | 2021-11-25 → 2021-11-25 09:30 | 2021-11-25 → 2021-11-25 18:00 | 1d? → 0.88d? | 101.86d → 89.12d | constraint start no earlier than 2021-11-25 → start no earlier than 2021-11-25 09:00 |
| 280 | Conversion des formules de calcul au format AQUEDI | 2021-11-23 → 2021-11-23 09:30 | 2021-11-23 → 2021-11-23 16:15 | 0.75d? → 0.66d? | 104.11d → 91.09d | constraint start no earlier than 2021-11-23 → start no earlier than 2021-11-23 09:00 |

| ID | Task | Start | Finish | Duration | Total float | Other |
| --- | --- | --- | --- | --- | --- | --- |
| 281 | Analyse, traitement du fichier d'extraction pour créer les bilans SANDRE et les points de mesure | 2021-11-24 → 2021-11-24 09:30 | 2021-11-24 → 2021-11-24 18:00 | 1d? → 0.88d? | 102.86d → 90d | constraint start no earlier than 2021-11-24 → start no earlier than 2021-11-24 09:00 |
| 282 | Injections des référentiels et des données de variables | 2021-11-30 → 2021-11-30 09:30 | 2021-12-03 → 2021-12-03 18:00 | 4d? → 3.5d? | 95.86d → 83.88d | constraint start no earlier than 2021-11-30 → start no earlier than 2021-11-30 09:00 |
| 283 | Reprise des attributs communs aux deux outils (description, période, type, alias, unité de mesure, métadonnées,…) en préproduction | 2021-11-22 → 2021-11-22 09:30 | 2021-11-22 → 2021-11-22 15:00 | 0.57d? → 0.5d? | 105.29d → 92.12d | constraint start no earlier than 2021-11-22 → start no earlier than 2021-11-22 09:00 |
| 284 | Simulation des injections des données de variable dans la base AQUEDI sur un environnement de test de Studia | 2021-11-26 → 2021-11-26 09:30 | 2021-11-26 → 2021-11-26 18:00 | 1d? → 0.88d? | 100.86d → 88.25d | constraint start no earlier than 2021-11-26 → start no earlier than 2021-11-26 09:00 |
| 285 | Duplication des variables avec plusieurs périodes | 2021-11-23 → 2021-11-23 09:30 | 2021-11-23 → 2021-11-23 15:00 | 0.57d? → 0.5d? | 104.29d → 91.25d | constraint start no earlier than 2021-11-23 → start no earlier than 2021-11-23 09:00 |
| 286 | **Autres** | 2021-12-02 → 2021-12-02 09:30 | 2021-12-09 → 2021-12-09 18:00 | 6d? → 5.25d? | 91.86d → 80.38d |  |
| 287 | Chiffrage du lot 2 des évolutions | 2021-12-09 → 2021-12-09 09:30 | 2021-12-09 → 2021-12-09 18:00 | 1d? → 0.88d? | 91.86d → 80.38d | constraint start no earlier than 2021-12-09 → start no earlier than 2021-12-09 05:00 |
| 288 | Préparation environnement de formation pour SAV | 2021-12-02 → 2021-12-02 09:30 | 2021-12-03 → 2021-12-03 18:00 | 1.5d? → 1.31d? | 95.86d → 83.88d | constraint start no earlier than 2021-12-02 → start no earlier than 2021-12-02 09:00 |
| 289 | **Support** | 2021-11-16 → 2021-11-16 09:30 | 2021-12-09 → 2021-12-09 18:00 | 18d? → 15.75d? | 91.86d → 80.38d |  |
| 290 | Bug interne - Module des imports automatiques KO | 2021-12-09 → 2021-12-09 09:30 | 2021-12-09 → 2021-12-09 18:00 | 1d? → 0.88d? | 91.86d → 80.38d | constraint finish no earlier than 2021-12-09 → finish no earlier than 2021-12-09 18:00 |
| 291 | Bug interne - Décalage dans les colonnes et leur valeurs lors de l'export des définitions de variable d'un groupe | 2021-12-02 → 2021-12-02 09:30 | 2021-12-02 → 2021-12-02 12:30 | 0.43d? → 0.38d? | 97.43d → 85.25d | constraint start no earlier than 2021-12-02 → start no earlier than 2021-12-02 09:00 |
| 292 | Bug interne - WS de récupération de l'état d'avancement des validation | 2021-12-03 → 2021-12-03 09:30 | 2021-12-03 → 2021-12-03 18:00 | 1d? → 0.88d? | 95.86d → 83.88d | constraint start no earlier than 2021-12-03 → start no earlier than 2021-12-03 09:00 |
| 293 | Ticket 1883 – Problème de visualisation des droits | 2021-11-16 → 2021-11-16 09:30 | 2021-11-26 → 2021-11-26 12:30 | 1.43d? → 1.25d? | 101.43d → 88.75d | constraint start no earlier than 2021-11-16 → start no earlier than 2021-11-16 09:00 |
| 294 | Bug interne - Module alarmes KO suite à la livraison des données fumées | 2021-11-29 → 2021-11-29 09:30 | 2021-11-30 → 2021-11-30 15:00 | 1d? → 0.88d? | 99.29d → 86.88d | constraint start no earlier than 2021-11-29 → start no earlier than 2021-11-29 09:00 |
| 295 | **Dette technique** | 2021-11-15 A → 2021-11-15 09:30 A | 2021-11-24 → 2021-11-24 18:00 | 8d? → 7d? | 102.86d → 90d |  |
| 296 | Bug interne - Impossibilité de créer un import LIMS | 2021-11-24 → 2021-11-24 09:30 | 2021-11-24 → 2021-11-24 15:00 | 0.57d? → 0.5d? | 103.29d → 90.38d | constraint start no earlier than 2021-11-24 → start no earlier than 2021-11-24 09:00 |
| 297 | Bug interne - Edition et validation / largeur des colonnes doit correspondre à la taille du code de variable | 2021-11-15 → 2021-11-15 09:30 | 2021-11-15 → 2021-11-15 18:00 | 1d? → 0.88d? | 109.86d → 96.12d | constraint start no earlier than 2021-11-15 → start no earlier than 2021-11-15 09:00 |
| 298 | Bug interne – Doublons dans le tableau des graphes - Frontend | 2021-11-15 → 2021-11-15 09:30 | 2021-11-15 → 2021-11-15 18:00 | 1d? → 0.88d? | 109.86d → 96.12d | constraint start no earlier than 2021-11-15 → start no earlier than 2021-11-15 09:00 |
| 299 | Bug interne – Alarmes sur les données fumées KO | 2021-11-24 A → 2021-11-24 09:30 A | 2021-11-24 A → 2021-11-24 18:00 A | 1d? → 0.88d? |  | constraint start no earlier than 2021-11-24 → start no earlier than 2021-11-24 09:00 |
| 300 | CRUD des variables - Optimisation du stepper | 2021-11-19 → 2021-11-19 15:00 | 2021-11-24 → 2021-11-24 18:00 | 3.43d? → 3d? | 102.86d → 90d | constraint start no earlier than 2021-11-19 → start no earlier than 2021-11-19 15:00 |
| 301 | **Evolutions SAV** | 2021-09-30 → 2021-09-30 09:30 | 2021-12-17 → 2021-12-17 18:00 | 57d? → 49.88d? | 85.86d → 75.12d |  |
| 302 | SAV37 – Gestion d’un nouveau format de date pour les imports CSV | 2021-12-10 → 2021-12-10 09:30 | 2021-12-10 → 2021-12-10 18:00 | 1d? → 0.88d? | 90.86d → 79.5d | constraint start no earlier than 2021-12-10 → start no earlier than 2021-12-10 05:00 |
| 303 | SAV38 – Implémentation de l’unité d’import | 2021-12-08 → 2021-12-08 09:30 | 2021-12-16 → 2021-12-16 18:00 | 6d? → 5.25d? | 86.86d → 76d | constraint start no earlier than 2021-12-08 → start no earlier than 2021-12-08 06:00 |
| 304 | SAV36 - Reprise de dumps et migration de données de Basta à Aquedi | 2021-10-01 → 2021-10-01 09:30 | 2021-11-18 → 2021-11-18 18:00 | 11.14d? → 9.75d? | 106.86d → 93.5d | constraint start no earlier than 2021-10-01 → start no earlier than 2021-10-01 09:00 |
| 305 | Etude de la volumétrie globale des variables | 2021-12-17 → 2021-12-17 09:30 | 2021-12-17 → 2021-12-17 18:00 | 1d? → 0.88d? | 85.86d → 75.12d | constraint start no earlier than 2021-12-17 → start no earlier than 2021-12-17 09:00 |
| 306 | SAV10 - Ajout de fonctions de calcul - Backend | 2021-09-30 → 2021-09-30 09:30 | 2021-10-19 → 2021-10-19 18:00 | 7.14d? → 6.25d? | 128.86d → 112.75d | constraint start no earlier than 2021-09-30 → start no earlier than 2021-09-30 09:00 |

## Version 3 (saved 2023-05-17)

Note of the change: up

Last finish stays 2022-04-18.

Changed:

| ID | Task | Start | Finish | Duration | Complete | Total float |
| --- | --- | --- | --- | --- | --- | --- |
| 1 | **Projet Aquedi SIAAP** |  | 2022-04-18 17:00 → none | 141.62d? → 0d? |  |  |
| 23 | **Version 1.9.0.3** |  |  | 22.75d? → 22.69d? |  | 54.12d → 0d |
| 38 | **Congés ponctuels** |  |  | 106.75d? → 106.69d? |  | 12.12d → 0d |
| 84 | **Encadrements** |  |  | 120.75d? → 120.69d? |  | 6.88d → 0d |
| 90 | **Version 1.8.5** |  | 2021-09-20 18:00 → none | 10.5d? → 0d? | 3% → 5% | -0.88d → 0d |
| 91 | Gestion des unités de mesure spécifique pour chaque usine - Frontend | 2021-09-08 09:30 → none | 2021-09-10 18:00 → none | 2.62d → 0d |  | 4.38d → 0d |
| 96 | Refonte formulaires - Frontend | 2021-09-03 09:30 → 2150-01-01 23:59 (+46871d) | 2021-09-07 18:00 → none | 2.62d → 0d |  | 4.38d → 0d |
| 107 | **Gestion des environnents** |  |  | 35.88d? → 35.81d? |  | 95.25d → 0d |
| 115 | **Support** |  |  | 9.62d? → 9.56d? |  | 120.62d → 0d |
| 136 | **Version 1.9.0 - 1.9.f** | 2021-09-03 09:30 A → 2021-09-22 09:30 A (+19d) | 2021-12-08 18:00 → none | 60.38d? → 0d? |  | 81.25d → 0d |
| 139 | **Gestion des données SICK sur l’usine SEC** |  |  | 39d? → 38.94d? |  | 91.25d → 0d |
| 162 | **Support** | 2021-09-03 09:30 → 2021-10-13 09:30 (+40d) | 2021-10-21 15:00 → none | 30.25d? → 0d? |  | 111.38d → 0d |
| 163 | Ticket 1953 – Recherche par nom des imports SFTP et LIMS KO - Frontend | 2021-09-03 09:30 → 2150-01-01 23:59 (+46871d) | 2021-09-03 15:00 → none | 0.5d? → 0d? |  | 141.12d → 0d |
| 166 | **Phase d'intégration SAV** | 2021-09-03 09:30 A → 2021-09-22 15:00 A (+19d) | 2021-12-08 18:00 → none | 60.38d? → 0d? | 15% → 16% | 81.25d → 0d |
| 172 | SAV05-Variables de type minute - Frontend | 2021-09-03 09:30 → 2150-01-01 23:59 (+46871d) | 2021-10-21 18:00 → none | 4d → 0d |  | 111d → 0d |
| 179 | SAV36 - Reprise historique - Bilan Sandre | 2021-09-03 09:30 → 2150-01-01 23:59 (+46871d) | 2021-09-03 18:00 → none | 0.88d? → 0d? |  | 140.75d → 0d |
| 227 | **Version 1.9.2** | 2021-09-03 09:30 → 2021-12-13 09:30 (+101d) | 2022-04-07 18:00 → none | 135.62d? → 0d? |  | 6d → 0d |
| 228 | **Evolutions SAV** | 2021-09-03 09:30 → 2021-12-13 09:30 (+101d) | 2022-04-06 12:30 → none | 134.25d? → 0d? |  | 7.38d → 0d |
| 229 | SAV14 - Frontend - Variables calculées liée à une procédure stockée | 2021-09-03 09:30 → 2150-01-01 23:59 (+46871d) | 2021-09-03 18:00 → none | 0.88d? → 0d? |  | 140.75d → 0d |
| 276 | **Version 1.9.0.1** |  |  | 49.88d? → 49.81d? |  | 75.12d → 0d |
| 289 | **Support** |  |  | 15.75d? → 15.69d? |  | 80.38d → 0d |
| 295 | **Dette technique** |  |  | 7d? → 6.94d? |  | 90d → 0d |
